# TN Transformer Outage 2021

Schedule from Primavera P6, 2021-05-28 to 2021-08-28, data date 2021-05-28.

## Calendars

- TPS-TJ-6d x 22hr Day/Night Shift: Mon 03:30-21:00; Tue 01:00-23:00; Wed-Sat 00:00-04:30, 06:30-00:00; Sun 10:00-14:30.
- TPS-MJ-6d x 10hr Day Shift: Mon-Sat 07:00-10:00, 10:30-14:00, 14:30-17:00; Sun off.
- TPS-MJ-7d x 24hr: Mon-Sun 00:00-00:00.
- TPS-MJ-7d x 22hr Day/Night Shift: Mon-Sun 00:00-06:00, 07:00-18:00, 19:00-00:00.
- TPS-MJ-6d x 10hr Night Shift: Mon 17:30-20:30, 21:00-00:00; Tue-Sat 00:00-00:30, 01:00-03:30, 17:30-20:30, 21:00-00:00; Sun 00:00-00:30, 01:00-03:30.
- TPS-MJ-6d x 12hr Day Shift: Mon-Sat 06:00-10:00, 10:30-14:00, 14:30-18:00; Sun off.
- TPS-MJ-6d x 20hr Day/Night Shift: Mon 06:00-00:00; Tue-Sat 00:00-03:00, 07:00-00:00; Sun 00:00-03:00.

## Resources

| Resource | Group |
| --- | --- |
| Non Destructive Testing | labor |
| Mechanical Fitter General | labor |
| Pressure Welder Big Bore | labor |
| Scaffolder | labor |
| Rigger | labor |
| Trades Assistant | labor |
| Post Weld Heat Treat | labor |
| SMW | labor |
| Electrician | labor |
| Lagger | labor |

## Schedule

| ID | WBS | Activity | Duration | Start | Finish | Predecessors | Total float | Free float | Constraint | Calendar | Contractor - MJ | Work Groups | Key Activities | KKS /Plant No. | Co-ordinator |
| --- | --- | --- | --- | --- | --- | --- | --- | --- | --- | --- | --- | --- | --- | --- | --- |
|  | rd | **Boiler Forced Cool Rundown** |  | 2021-07-23 15:00 | 2021-07-26 06:00 |  |  |  |  |  |  |  |  |  |  |
| BFCRD-010 |  | Auxiliary Boiler Runup | 0.75d | 2021-07-23 15:00 | 2021-07-23 21:00 |  | 0d |  | start on 2021-07-23 | TPS-MJ-7d x 24hr | SCL | T-OPS |  |  |  |
| BFCRD-020 |  | 445MW to 180MW | 0.12d | 2021-07-23 21:00 | 2021-07-23 22:00 | BFCRD-010 | 1.19d | 0d |  | TPS-MJ-7d x 24hr | SCL | T-OPS |  |  |  |
| BFCRD-030 |  | SFP to EFP changeover | 0.12d | 2021-07-23 22:00 | 2021-07-23 23:00 | BFCRD-020 | 1.19d | 0d |  | TPS-MJ-7d x 24hr | SCL | T-OPS |  |  |  |
| BFCRD-040 |  | Load down to 0MW | 0.12d | 2021-07-23 23:00 | 2021-07-24 00:00 | BFCRD-030 | 1.19d | 0d |  | TPS-MJ-7d x 24hr | SCL | T-OPS |  |  |  |
| BFCRD-050 |  | Turbine Trip | 0d | 2021-07-24 00:00 | 2021-07-24 00:00 | BFCRD-040 | 1.19d | 0d |  | TPS-MJ-7d x 24hr | SCL | T-OPS | MILE |  |  |
| BFCRD-060 |  | Main Fuel Trip - Boiler | 0.12d | 2021-07-24 00:00 | 2021-07-24 01:00 | BFCRD-050 | 1.19d | 0d |  | TPS-MJ-7d x 24hr | SCL | T-OPS |  |  |  |
| BFCRD-070 |  | Re-establish circ flow | 0.12d | 2021-07-24 01:00 | 2021-07-24 02:00 | BFCRD-060 | 1.19d | 0d |  | TPS-MJ-7d x 24hr | SCL | T-OPS |  |  |  |
| BFCRD-080 |  | Boiler force cool - water | 0.62d | 2021-07-24 02:00 | 2021-07-24 07:00 | BFCRD-070 | 1.19d | 0d |  | TPS-MJ-7d x 24hr | SCL | T-OPS |  |  |  |
| BFCRD-110 |  | Open boiler doors | 0.38d | 2021-07-24 02:00 | 2021-07-24 05:00 | BFCRD-080 SS | 1.19d | 0d |  | TPS-MJ-7d x 24hr | SCL | T-OPS |  |  |  |
| BFCRD-120 |  | SCC skirt lift | 0.25d | 2021-07-24 05:00 | 2021-07-24 07:00 | BFCRD-110 | 1.19d | 0d |  | TPS-MJ-7d x 24hr | SCL | T-OPS |  |  |  |
| BFCRD-090 |  | Drain boiler | 0.38d | 2021-07-24 07:00 | 2021-07-24 10:00 | BFCRD-080 | 106.5d | 0d |  | TPS-MJ-7d x 24hr | SCL | T-OPS |  |  |  |
| BFCRD-130 |  | Boiler force cool - air | 0.75d | 2021-07-24 07:00 | 2021-07-24 13:00 | BFCRD-120 | 1.19d | 0d |  | TPS-MJ-7d x 24hr | SCL | T-OPS |  |  |  |
| BFCRD-100 |  | Break vacuum | 0.12d | 2021-07-24 10:00 | 2021-07-24 11:00 | BFCRD-090 | 106.5d |  |  | TPS-MJ-7d x 24hr | SCL | T-OPS |  |  |  |
| BFCRD-140 |  | Turbine force cool - vlv prep | 0.5d | 2021-07-24 13:00 | 2021-07-24 17:00 | BFCRD-130 | 1.19d | 0d |  | TPS-MJ-7d x 24hr | SCL | T-OPS |  |  |  |
| BFCRD-150 |  | Drain feedwater systems | 0.38d | 2021-07-24 17:00 | 2021-07-24 20:00 | BFCRD-140 | 1.19d | 0d |  | TPS-MJ-7d x 24hr | SCL | T-OPS |  |  |  |
| BFCRD-160 |  | Turbine force cool - blower run | 3d | 2021-07-24 20:00 | 2021-07-25 20:00 | BFCRD-150 | 1.19d | 0d |  | TPS-MJ-7d x 24hr | SCL | T-OPS |  |  |  |
| BFCRD-170 |  | Drain condensate system | 0.25d | 2021-07-25 20:00 | 2021-07-25 22:00 | BFCRD-160 | 102.12d |  |  | TPS-MJ-7d x 24hr | SCL | T-OPS |  |  |  |
| BFCRD-180 |  | Hang ETM IC and verify | 1.25d | 2021-07-25 20:00 | 2021-07-26 06:00 | BFCRD-160 | 1.19d | 0d |  | TPS-MJ-7d x 24hr | SCL | T-OPS |  |  |  |
| BFCRD-190 |  | First SWA's available | 0d | 2021-07-26 06:00 | 2021-07-26 06:00 | BFCRD-180 | 1.19d | 0d |  | TPS-MJ-7d x 24hr | SCL | T-OPS | MILE |  |  |
|  | TX | **Transformer Replacement** |  | 2021-05-28 07:00 | 2021-08-26 11:30 |  |  |  |  |  |  |  |  |  |  |
|  | P20041 | **Replacement of 550MVA Transformer** |  | 2021-05-28 07:00 | 2021-08-26 11:30 |  |  |  |  |  |  |  |  |  |  |
|  | 00599483 | **00599483 - P20041 TN Transformer Overhead Costs** |  | 2021-05-28 07:00 | 2021-05-28 07:00 |  |  |  |  |  |  |  |  |  |  |
| 00599483-010 |  | Operations IC Planning & Exec Support | 0d | 2021-05-28 07:00 | 2021-05-28 07:00 |  | 72d |  |  | TPS-MJ-6d x 10hr Day Shift | SCL | T-OPS |  | N1BAT - 1U GENERATOR TRANSFORMERS | AK |
| 00599483-020 |  | OH Management Team Costs | 0d | 2021-05-28 07:00 | 2021-05-28 07:00 |  | 72d |  |  | TPS-MJ-6d x 10hr Day Shift | SCL | T-ADM |  | N1BAT - 1U GENERATOR TRANSFORMERS | AK |
| 00599483-030 |  | FRT/Nurse DS NS Coverage | 0d | 2021-05-28 07:00 | 2021-05-28 07:00 |  | 72d |  |  | TPS-MJ-6d x 10hr Day Shift | SCL | T-ADM |  | N1BAT - 1U GENERATOR TRANSFORMERS | AK |
| 00599483-040 |  | Inductions & Training | 0d | 2021-05-28 07:00 | 2021-05-28 07:00 |  | 72d |  |  | TPS-MJ-6d x 10hr Day Shift | SCL | T-ADM |  | N1BAT - 1U GENERATOR TRANSFORMERS | AK |
| 00599483-050 |  | Office, Crib and Facilities Cleaning | 0d | 2021-05-28 07:00 | 2021-05-28 07:00 |  | 72d |  |  | TPS-MJ-6d x 10hr Day Shift | F | 5ZCF |  | N1BAT - 1U GENERATOR TRANSFORMERS | AK |
| 00599483-060 |  | Hire Vehicles | 0d | 2021-05-28 07:00 | 2021-05-28 07:00 |  | 72d |  |  | TPS-MJ-6d x 10hr Day Shift | SCL | T-ADM |  | N1BAT - 1U GENERATOR TRANSFORMERS | AK |
| 00599483-070 |  | TRX Switching Sheet Writing | 0d | 2021-05-28 07:00 | 2021-05-28 07:00 |  | 72d |  |  | TPS-MJ-6d x 10hr Day Shift | SCL | T-ADM |  | N1BAT - 1U GENERATOR TRANSFORMERS | AK |
| 00599483-080 |  | Canteen Coverage for Longer Shifts | 0d | 2021-05-28 07:00 | 2021-05-28 07:00 |  | 72d |  |  | TPS-MJ-6d x 10hr Day Shift | SCL | T-ADM |  | N1BAT - 1U GENERATOR TRANSFORMERS | AK |
| 00599483-090 |  | Fuel Oil - Full Cold-Start | 0d | 2021-05-28 07:00 | 2021-05-28 07:00 |  | 72d |  |  | TPS-MJ-6d x 10hr Day Shift | SCL | T-OPS |  | N1BAT - 1U GENERATOR TRANSFORMERS | AK |
| 00599483-100 |  | AOD Testing for Forced Outage Work Force | 0d | 2021-05-28 07:00 | 2021-05-28 07:00 |  | 72d |  |  | TPS-MJ-6d x 10hr Day Shift | SCL | 15112 |  | N1BAT - 1U GENERATOR TRANSFORMERS | AK |
| 00599483-110 |  | Lime for Coating of Fabric Filter Bags | 0d | 2021-05-28 07:00 | 2021-05-28 07:00 |  | 72d |  |  | TPS-MJ-6d x 10hr Day Shift | SCL | T-ADM |  | N1BAT - 1U GENERATOR TRANSFORMERS | AK |

| ID | WBS | Activity | Duration | Start | Finish | Predecessors | Total float | Free float | Constraint | Calendar | KKS /Plant No. | Contractor - MJ | Work Groups | Co-ordinator |
| --- | --- | --- | --- | --- | --- | --- | --- | --- | --- | --- | --- | --- | --- | --- |
|  | 00599484 | **00599484 - P20041 - TN Transformer Replacement WBS** |  | 2021-05-28 07:00 | 2021-08-26 11:30 |  |  |  |  |  |  |  |  |  |
|  | 1 | **Site Induction** |  | 2021-05-28 07:00 | 2021-05-28 07:00 |  |  |  |  |  |  |  |  |  |
| 00599484-010 |  | All inductions completed | 0d | 2021-05-28 07:00 | 2021-05-28 07:00 |  | 72d |  |  | TPS-MJ-6d x 10hr Day Shift | N1BAT - 1U GENERATOR TRANSFORMERS | GE | T-TRX | AK |
|  | 2 | **GE TRF Delivery** |  | 2021-07-01 07:00 | 2021-07-31 12:30 |  |  |  |  |  |  |  |  |  |
|  | 1 | **Road Transport from Port of Brisbane to TNPS** |  | 2021-07-01 07:00 | 2021-07-07 12:30 |  |  |  |  |  |  |  |  |  |
| 00599484-020 |  | CIF Port of Brisbane loading on Beam set | 1.5d | 2021-07-01 07:00 | 2021-07-02 13:30 |  | 15.6d | 0d | start on or after 2021-07-01 | TPS-MJ-6d x 10hr Day Shift | N1BAT - 1U GENERATOR TRANSFORMERS | ODLS | T-OTH | AK |
| 00599484-030 |  | Inspection and Impact recorder data | 0.5d | 2021-07-02 13:30 | 2021-07-03 09:00 | 00599484-020 | 15.6d | 0d |  | TPS-MJ-6d x 10hr Day Shift | N1BAT - 1U GENERATOR TRANSFORMERS | GE | T-TRX | AK |
| 00599484-040 |  | Transport to Tarong Nth PS | 4.5d | 2021-07-03 09:00 | 2021-07-07 12:30 | 00599484-030 | 23.75d | 0d |  | TPS-MJ-6d x 12hr Day Shift | N1BAT - 1U GENERATOR TRANSFORMERS | ODLS | T-OTH | AK |
| 00599484-050 |  | Delivery of the accessories | 3d | 2021-07-03 09:00 | 2021-07-07 12:30 | 00599484-040 SS | 40.9d |  |  | TPS-MJ-6d x 10hr Day Shift | N1BAT - 1U GENERATOR TRANSFORMERS | ODLS | T-OTH | AK |
|  | 2 | **Pre-Installation** |  | 2021-07-05 07:00 | 2021-07-31 12:30 |  |  |  |  |  |  |  |  |  |
| 00599484-060 |  | Mobilisation of GE crew to TNPS | 0.5d | 2021-07-05 07:00 | 2021-07-05 12:30 | 00599484-040 SS | 18.4d | 0d | start on or after 2021-07-04 | TPS-MJ-6d x 10hr Day Shift | N1BAT - 1U GENERATOR TRANSFORMERS | GE | T-TRX | AK |
| 00599484-070 |  | Site Set up & accessories laydown | 1.5d | 2021-07-05 07:00 | 2021-07-06 13:30 | 00599484-060 SS | 18.4d | 2.8d |  | TPS-MJ-6d x 10hr Day Shift | N1BAT - 1U GENERATOR TRANSFORMERS | GE | T-TRX | AK |
| 00599484-080 |  | Unload transformer into spare bay | 1.5d | 2021-07-07 12:30 | 2021-07-09 09:00 | 00599484-040 | 15.6d | 0d |  | TPS-MJ-6d x 10hr Day Shift | N1BAT - 1U GENERATOR TRANSFORMERS | ODLS | T-OTH | AK |
| 00599484-090 |  | Core to Frame testing | 0.5d | 2021-07-09 09:00 | 2021-07-09 15:00 | 00599484-080 | 38.9d |  |  | TPS-MJ-6d x 10hr Day Shift | N1BAT - 1U GENERATOR TRANSFORMERS | GE | T-TRX | AK |
| 00599484-100 |  | Download impact recorder data | 0.5d | 2021-07-09 09:00 | 2021-07-09 15:00 | 00599484-080 | 15.6d | 0d |  | TPS-MJ-6d x 10hr Day Shift | N1BAT - 1U GENERATOR TRANSFORMERS | GE | T-TRX | AK |
| 00599484-110 |  | Install LV turrets, LV bushings | 1d | 2021-07-09 15:00 | 2021-07-10 16:00 | 00599484-070, 00599484-100 | 15.6d | 0d |  | TPS-MJ-6d x 10hr Day Shift | N1BAT - 1U GENERATOR TRANSFORMERS | GE | T-TRX | AK |
| 00599484-130 |  | Install HV turrets | 1d | 2021-07-10 16:00 | 2021-07-12 17:00 | 00599484-070, 00599484-110 | 34.4d | 0d |  | TPS-MJ-6d x 10hr Day Shift | N1BAT - 1U GENERATOR TRANSFORMERS | GE | T-TRX | AK |
| 00599484-180 |  | Wire up field devs & new ctrl j/boxes | 6d | 2021-07-10 16:00 | 2021-07-19 12:30 | 00599484-110 | 31.9d |  |  | TPS-MJ-6d x 10hr Day Shift | N1BAT - 1U GENERATOR TRANSFORMERS | JP RICH | T-HEL | AK |
| 00599484-140 |  | Erect Conservator frame | 1d | 2021-07-13 07:00 | 2021-07-14 08:00 | 00599484-130 | 34.4d | 0d |  | TPS-MJ-6d x 10hr Day Shift | N1BAT - 1U GENERATOR TRANSFORMERS | GE | T-TRX | AK |
| 00599484-150 |  | Install Conservator | 0.5d | 2021-07-14 08:00 | 2021-07-14 13:30 | 00599484-140 | 35.4d |  |  | TPS-MJ-6d x 10hr Day Shift | N1BAT - 1U GENERATOR TRANSFORMERS | GE | T-TRX | AK |
| 00599484-160 |  | Install air breather pipe work | 0.5d | 2021-07-14 08:00 | 2021-07-14 13:30 | 00599484-140 | 34.4d | 0d |  | TPS-MJ-6d x 10hr Day Shift | N1BAT - 1U GENERATOR TRANSFORMERS | GE | T-TRX | AK |
| 00599484-170 |  | Cooler hdr & 1off rad under conservator | 1d | 2021-07-14 13:30 | 2021-07-15 15:00 | 00599484-160 | 34.4d |  |  | TPS-MJ-6d x 10hr Day Shift | N1BAT - 1U GENERATOR TRANSFORMERS | GE | T-TRX | AK |
| 00599484-120 |  | Cubicle installation | 0.5d | 2021-07-31 07:00 | 2021-07-31 12:30 | 00599484-110, 00599484-260 | 0.2d | 0d |  | TPS-MJ-6d x 10hr Day Shift | N1BAT - 1U GENERATOR TRANSFORMERS | GE | T-TRX | AK |
|  | 3 | **Outage, TRF Changeover & E&C** |  | 2021-07-27 07:00 | 2021-08-25 10:00 |  |  |  |  |  |  |  |  |  |
|  | 1 | **Stanwell Switching** |  | 2021-07-27 07:00 | 2021-07-30 15:00 |  |  |  |  |  |  |  |  |  |
| 00599484-190 |  | HV Isolation | 0.9d | 2021-07-27 07:00 | 2021-07-27 17:00 | BFCRD-190 | 0.8d | 0d | start on or after 2021-07-27 | TPS-MJ-6d x 10hr Day Shift | N1BAT - 1U GENERATOR TRANSFORMERS | SCL | T-ITX | AK |
| 00599484-200 |  | Containers removal | 0.62d | 2021-07-27 17:30 | 2021-07-27 23:00 | 00599484-190 | 29.25d | 1.12d |  | TPS-MJ-6d x 10hr Night Shift | N1BAT - 1U GENERATOR TRANSFORMERS | SCL | T-ITX | AK |
| 00599484-210 |  | Removal of Overhead lines | 0.5d | 2021-07-28 07:00 | 2021-07-28 12:30 | 00599484-200 SS | 22.7d | 0d |  | TPS-MJ-6d x 10hr Day Shift | N1BAT - 1U GENERATOR TRANSFORMERS | SCL | T-ITX | AK |
| 00599484-220 |  | Fire deluge removal | 2d | 2021-07-28 12:30 | 2021-07-30 15:00 | 00599484-210 | 22.7d |  |  | TPS-MJ-6d x 10hr Day Shift | N1BAT - 1U GENERATOR TRANSFORMERS | CHUBB | 5SFM | AK |

| ID | WBS | Activity | Duration | Start | Finish | Predecessors | Total float | Free float | Calendar | KKS /Plant No. | Contractor - MJ | Work Groups | Co-ordinator |
| --- | --- | --- | --- | --- | --- | --- | --- | --- | --- | --- | --- | --- | --- |
|  | 2 | **Toshiba TRF Dismantle / Relocation** |  | 2021-07-28 07:00 | 2021-08-19 12:30 |  |  |  |  |  |  |  |  |
| 00599484-230 |  | Install Impact Recorder | 0.1d | 2021-07-28 07:00 | 2021-07-28 08:00 | 00599484-190 | 0.8d | 0d | TPS-MJ-6d x 10hr Day Shift | N1BAT - 1U GENERATOR TRANSFORMERS | GE | T-TRX | AK |
| 00599484-240 |  | Transformer LV Disconnections | 1d | 2021-07-28 07:00 | 2021-07-29 08:00 | 00599484-230 SS | 0.8d | 0d | TPS-MJ-6d x 10hr Day Shift | N1BAT - 1U GENERATOR TRANSFORMERS | GE | T-TRX | AK |
| 00599484-250 |  | Drain 85KL into ISO Tanks | 1d | 2021-07-29 08:00 | 2021-07-30 09:00 | 00599484-240 | 21.2d | 0d | TPS-MJ-6d x 10hr Day Shift | N1BAT - 1U GENERATOR TRANSFORMERS | GE | T-TRX | AK |
| 00599484-270 |  | Install temporay supports on HV bushings | 1d | 2021-07-29 08:00 | 2021-07-30 09:00 | 00599484-250 SS | 23.2d |  | TPS-MJ-6d x 10hr Day Shift | N1BAT - 1U GENERATOR TRANSFORMERS | GE | T-TRX | AK |
| 00599484-280 |  | Remove front compound fence & bund wall | 1d | 2021-07-29 08:00 | 2021-07-30 09:00 | 00599484-250 SS | 23.2d |  | TPS-MJ-6d x 10hr Day Shift | N1BAT - 1U GENERATOR TRANSFORMERS | SCL | T-ITX | AK |
| 00599484-260 |  | Discon field wiring to marshalling j-box | 1.25d | 2021-07-29 17:30 | 2021-07-30 18:30 | 00599484-240 | 1d |  | TPS-MJ-6d x 10hr Night Shift | N1BAT - 1U GENERATOR TRANSFORMERS | JP RICH | T-HEL | AK |
| 00599484-290 |  | Remove clr and pmp as reqd for jacking | 1d | 2021-07-30 09:00 | 2021-07-31 10:00 | 00599484-250 | 22.2d |  | TPS-MJ-6d x 10hr Day Shift | N1BAT - 1U GENERATOR TRANSFORMERS | GE | T-TRX | AK |
| 00599484-300 |  | Set up of Jack & Skate Equipment | 1d | 2021-07-31 07:00 | 2021-08-02 08:00 | 00599484-260 | 6.6d | 0d | TPS-MJ-6d x 10hr Day Shift | N1BAT - 1U GENERATOR TRANSFORMERS | ODLS | T-OTH | AK |
| 00599484-310 |  | Move TRF outside of Bay (park) | 1d | 2021-08-02 08:00 | 2021-08-03 09:00 | 00599484-300 | 6.6d | 0d | TPS-MJ-6d x 10hr Day Shift | N1BAT - 1U GENERATOR TRANSFORMERS | ODLS | T-OTH | AK |
| 00599484-320 |  | Complete TRF relocation into Spare Bay | 1d | 2021-08-04 10:30 | 2021-08-05 11:30 | 00599484-420 | 6.6d | 0d | TPS-MJ-6d x 10hr Day Shift | N1BAT - 1U GENERATOR TRANSFORMERS | ODLS | T-OTH | AK |
| 00599484-330 |  | Build bundwall on spare bay | 2d | 2021-08-05 11:30 | 2021-08-07 13:30 | 00599484-320 | 16.5d |  | TPS-MJ-6d x 10hr Day Shift | N1BAT - 1U GENERATOR TRANSFORMERS | SCL | T-ITX | AK |
| 00599484-340 |  | Re-install cooler and pump | 1d | 2021-08-12 07:00 | 2021-08-13 08:00 | 00599484-500 | 7.6d | 0d | TPS-MJ-6d x 10hr Day Shift | N1BAT - 1U GENERATOR TRANSFORMERS | GE | T-TRX | AK |
| 00599484-350 |  | Apply Vacuum | 2.5d | 2021-08-13 08:00 | 2021-08-16 16:00 | 00599484-340 | 7.6d | 0d | TPS-MJ-6d x 10hr Day Shift | N1BAT - 1U GENERATOR TRANSFORMERS | GE | T-TRX | AK |
| 00599484-360 |  | Oil filling | 2d | 2021-08-16 16:00 | 2021-08-19 08:00 | 00599484-350 | 7.6d | 0d | TPS-MJ-6d x 10hr Day Shift | N1BAT - 1U GENERATOR TRANSFORMERS | GE | T-TRX | AK |
| 00599484-370 |  | Demobilise ISO Tanks | 0.3d | 2021-08-19 08:00 | 2021-08-19 11:30 | 00599484-360 | 7.6d | 0d | TPS-MJ-6d x 10hr Day Shift | N1BAT - 1U GENERATOR TRANSFORMERS | GE | T-TRX | AK |
| 00599484-380 |  | Sign off ITP & Handover TRF to SCL | 0.1d | 2021-08-19 11:30 | 2021-08-19 12:30 | 00599484-370 | 7.6d |  | TPS-MJ-6d x 10hr Day Shift | N1BAT - 1U GENERATOR TRANSFORMERS | GE | T-TRX | AK |
|  | 3 | **GE GSU Relocation & E&C** |  | 2021-07-28 07:00 | 2021-08-25 10:00 |  |  |  |  |  |  |  |  |
| 00599484-390 |  | Install Impact Recorder | 0.1d | 2021-07-28 07:00 | 2021-07-28 08:00 | 00599484-190 | 25.1d |  | TPS-MJ-6d x 10hr Day Shift | N1BAT - 1U GENERATOR TRANSFORMERS | GE | T-TRX | AK |
| 00599484-400 |  | Set up of Jack & Skate Equipment | 1d | 2021-07-30 09:00 | 2021-07-31 10:00 | 00599484-250 | 21.2d | 0d | TPS-MJ-6d x 10hr Day Shift | N1BAT - 1U GENERATOR TRANSFORMERS | ODLS | T-OTH | AK |
| 00599484-410 |  | Move TFR past Service Bay (park) | 1d | 2021-07-31 10:30 | 2021-08-02 11:30 | 00599484-400 | 21.2d |  | TPS-MJ-6d x 10hr Day Shift | N1BAT - 1U GENERATOR TRANSFORMERS | ODLS | T-OTH | AK |
| 00599484-450 |  | Reconnect field wiring to cubicles | 7d | 2021-07-31 12:30 | 2021-08-10 10:00 | 00599484-120 | 0.2d | 0d | TPS-MJ-6d x 10hr Day Shift | N1BAT - 1U GENERATOR TRANSFORMERS | JP RICH | T-HEL | AK |
| 00599484-420 |  | Complete TRF relocation into Service Bay | 1d | 2021-08-03 09:00 | 2021-08-04 10:00 | 00599484-310 | 6.6d | 0d | TPS-MJ-6d x 10hr Day Shift | N1BAT - 1U GENERATOR TRANSFORMERS | ODLS | T-OTH | AK |
| 00599484-430 |  | Install HV Bushings | 1d | 2021-08-05 11:30 | 2021-08-06 12:30 | 00599484-420, 00599484-320 | 6.6d | 0d | TPS-MJ-6d x 10hr Day Shift | N1BAT - 1U GENERATOR TRANSFORMERS | GE | T-TRX | AK |
| 00599484-470 |  | Re-instate Bundwall & compound fence | 2d | 2021-08-05 11:30 | 2021-08-07 13:30 | 00599484-430 SS | 16.5d |  | TPS-MJ-6d x 10hr Day Shift | N1BAT - 1U GENERATOR TRANSFORMERS | SCL | T-ITX | AK |
| 00599484-440 |  | Install cooler and pumps | 1d | 2021-08-06 12:30 | 2021-08-07 13:30 | 00599484-430 | 6.6d | 0d | TPS-MJ-6d x 10hr Day Shift | N1BAT - 1U GENERATOR TRANSFORMERS | GE | T-TRX | AK |
| 00599484-460 |  | Apply vacuum (36hrs) | 4.5d | 2021-08-07 13:30 | 2021-08-09 01:30 | 00599484-440 | 28.25d | 0.56d | TPS-MJ-7d x 24hr | N1BAT - 1U GENERATOR TRANSFORMERS | GE | T-TRX | AK |
| 00599484-480 |  | Re-instate fire deluge system | 1d | 2021-08-07 13:30 | 2021-08-09 15:00 | 00599484-440 | 15.5d |  | TPS-MJ-6d x 10hr Day Shift | N1BAT - 1U GENERATOR TRANSFORMERS | CHUBB | 5SFM | AK |
| 00599484-490 |  | Oil fill | 2d | 2021-08-09 06:00 | 2021-08-11 02:00 | 00599484-460 | 8.32d | 0d | TPS-MJ-6d x 20hr Day/Night Shift | N1BAT - 1U GENERATOR TRANSFORMERS | GE | T-TRX | AK |
| 00599484-500 |  | Pressure test (24hrs) | 3d | 2021-08-11 02:00 | 2021-08-12 02:00 | 00599484-490 | 28.19d | 0.62d | TPS-MJ-7d x 24hr | N1BAT - 1U GENERATOR TRANSFORMERS | GE | T-TRX | AK |
| 00599484-510 |  | Oil soak (48hrs) | 2d | 2021-08-12 07:00 | 2021-08-14 09:00 | 00599484-500 | 11.5d |  | TPS-MJ-6d x 10hr Day Shift | N1BAT - 1U GENERATOR TRANSFORMERS | GE | T-TRX | AK |

| ID | WBS | Activity | Duration | Start | Finish | Predecessors | Total float | Free float | Calendar | Resources | KKS /Plant No. | Contractor - MJ | Work Groups | Co-ordinator | Comments - 5TF21 | PKG - Co-ord 1 | UGL Sup. |
| --- | --- | --- | --- | --- | --- | --- | --- | --- | --- | --- | --- | --- | --- | --- | --- | --- | --- |
|  | 1 | **Final Checks & Reconnection** |  | 2021-08-10 10:30 | 2021-08-25 10:00 |  |  |  |  |  |  |  |  |  |  |  |  |
| 00599484-520 |  | Commissioning Functional checks | 5d | 2021-08-10 10:30 | 2021-08-16 16:00 | 00599484-450 | 0.2d | 0d | TPS-MJ-6d x 10hr Day Shift |  | N1BAT - 1U GENERATOR TRANSFORMERS | GE | T-TRX | AK |  |  |  |
| 00599484-530 |  | SFRA Test | 1d | 2021-08-16 16:00 | 2021-08-17 17:00 | 00599484-520 | 0.2d | 0d | TPS-MJ-6d x 10hr Day Shift |  | N1BAT - 1U GENERATOR TRANSFORMERS | GE | T-TRX | AK |  |  |  |
| 00599484-540 |  | Measurement of turns ratio | 0.5d | 2021-08-18 07:00 | 2021-08-18 12:30 | 00599484-530 | 0.2d | 0d | TPS-MJ-6d x 10hr Day Shift |  | N1BAT - 1U GENERATOR TRANSFORMERS | GE | T-TRX | AK |  |  |  |
| 00599484-550 |  | Measurement of winding resistance | 0.5d | 2021-08-18 12:30 | 2021-08-19 08:00 | 00599484-540 | 0.2d | 0d | TPS-MJ-6d x 10hr Day Shift |  | N1BAT - 1U GENERATOR TRANSFORMERS | GE | T-TRX | AK |  |  |  |
| 00599484-560 |  | Measurement of insulation resistance | 0.5d | 2021-08-19 08:00 | 2021-08-19 13:30 | 00599484-550 | 0.2d | 0d | TPS-MJ-6d x 10hr Day Shift |  | N1BAT - 1U GENERATOR TRANSFORMERS | GE | T-TRX | AK |  |  |  |
| 00599484-570 |  | Measurement of Dissipation factor and | 0.5d | 2021-08-19 13:30 | 2021-08-20 09:00 | 00599484-560 | 0.2d | 0d | TPS-MJ-6d x 10hr Day Shift |  | N1BAT - 1U GENERATOR TRANSFORMERS | GE | T-TRX | AK |  |  |  |
| 00599484-580 |  | Transformer LV & HV droppers re-connect | 0.5d | 2021-08-20 09:00 | 2021-08-20 15:00 | 00599484-570 | 0.2d | 0d | TPS-MJ-6d x 10hr Day Shift |  | N1BAT - 1U GENERATOR TRANSFORMERS | GE | T-TRX | AK |  |  |  |
| 00599484-590 |  | Acknowledge PC by Stanwell and GE | 0.1d | 2021-08-20 15:00 | 2021-08-20 16:00 | 00599484-580 | 6.4d |  | TPS-MJ-6d x 10hr Day Shift |  | N1BAT - 1U GENERATOR TRANSFORMERS | GE | T-TRX | AK |  |  |  |
| 00599484-600 |  | Powerlink final HV overhead connections | 1.2d | 2021-08-20 15:00 | 2021-08-23 08:00 | 00599484-580 | 0.2d | 0d | TPS-MJ-6d x 10hr Day Shift |  | N1BAT - 1U GENERATOR TRANSFORMERS | SCL | T-ITX | AK |  |  |  |
| 00599484-620 |  | 00599485-610 - Return SWA | 0.6d | 2021-08-23 08:00 | 2021-08-23 15:00 | 00599484-600 | 0.2d | 0d | TPS-MJ-6d x 10hr Day Shift |  |  |  |  | AK |  |  |  |
| 00599484-630 |  | Heat Soak (48hrs) | 2d | 2021-08-23 08:00 | 2021-08-25 10:00 | 00599484-600 | 3.3d |  | TPS-MJ-6d x 10hr Day Shift |  | N1BAT - 1U GENERATOR TRANSFORMERS | SCL | T-ITX | AK |  |  |  |
|  | 4 | **Demobilise** |  | 2021-08-23 08:00 | 2021-08-26 11:30 |  |  |  |  |  |  |  |  |  |  |  |  |
| 00599484-610 |  | Cleanup site and GE Demobilisation | 3d | 2021-08-23 08:00 | 2021-08-26 11:30 | 00599484-600 | 2.3d |  | TPS-MJ-6d x 10hr Day Shift |  | N1BAT - 1U GENERATOR TRANSFORMERS | GE | T-TRX | AK |  |  |  |
|  | BL | **Penthouse Welding Works** |  | 2021-05-28 00:00 | 2021-08-23 04:00 |  |  |  |  |  |  |  |  |  |  |  |  |
|  | P20307 | **Boiler Secondary Superheater Attemperator Replacement** |  | 2021-05-28 00:00 | 2021-08-23 04:00 |  |  |  |  |  |  |  |  |  |  |  |  |
|  | 00597605 | **00597605 - P20307 SSH Attemperator A Replacement** |  | 2021-07-30 11:00 | 2021-08-18 03:00 |  |  |  |  |  |  |  |  |  |  |  |  |
|  | 1 | **"A" Side Feeder Pipes 282-P006 "A" - Removal** |  | 2021-07-30 11:00 | 2021-08-04 21:00 |  |  |  |  |  |  |  |  |  |  |  |  |
| 00597605-005 |  | Mark Upstream and Downstream Cut Positions - 282-P006 "A" Feeder Pipe | 0.09d | 2021-07-30 11:00 | 2021-07-30 13:00 | 00597641-270, 00597641-120, 00597641-130 | 0.43d | 0d |  | Pressure Welder Big Bore [4 h] |  | UGL | T-BOI | PV | 15 | PV | GG |
| 00597605-010 |  | SCL Engineering Verification of Cut Position - 282-P006 "A" Feeder Pipe | 0.09d | 2021-07-30 13:00 | 2021-07-30 15:00 | 00597605-005 | 3.89d | 2.45d |  | Non Destructive Testing [2 h] | N1HAH - 1U BOILER SUPERHEATING SYSTEM | SCL | T-ENG | PV |  | PV |  |
| 00597605-015 |  | Install Feeder Pipe Support Rigging - 282-P006 "A" Feeder Pipe | 0.09d | 2021-07-30 13:00 | 2021-07-30 15:00 | 00597641-240, 00597605-005 | 3.07d | 2.18d |  | Rigger [4 h] |  | UGL | T-RGC | PV |  | MB | CT |
| 00597605-065 |  | Mark Upstream and Downstream Cut Positions - 282-P011 "A" Feeder Pipe | 0.09d | 2021-07-30 13:00 | 2021-07-30 15:00 | 00597605-005 | 0.43d | 0d |  | Pressure Welder Big Bore [4 h] |  | UGL | T-BOI | PV |  | PV | GG |
| 00597605-070 |  | SCL Engineering Verification of Cut Position - 282-P011 "A" Feeder Pipe | 0.09d | 2021-07-30 15:00 | 2021-07-30 17:00 | 00597605-065 | 3.25d | 0d |  | Non Destructive Testing [2 h] | N1HAH - 1U BOILER SUPERHEATING SYSTEM | SCL | T-ENG | PV |  | PV |  |
| 00597605-075 |  | Install Feeder Pipe Support Rigging - 282-P011 "A" Feeder Pipe | 0.09d | 2021-07-30 17:00 | 2021-07-30 19:00 | 00597605-070 | 3.25d | 2.27d |  | Rigger [4 h] |  | UGL | T-RGC | PV |  | MB | CT |
| 00597605-020 |  | Install Pipe Preparation Machine - Feeder Pipe 282-P006 "A" Upstream Weld | 0.27d | 2021-08-02 16:00 | 2021-08-03 02:00 | BFCRD-190, 00597605-015, 00597605-160 | 0.89d | 0d |  | Mechanical Fitter General [6 h] | N1HAH - 1U BOILER SUPERHEATING SYSTEM | UGL | T-MAC | PV |  | PV | GG |
| 00597605-025 |  | Machine Out Old Weld - Feeder Pipe 282-P006 "A" Upstream Weld | 0.55d | 2021-08-03 02:00 | 2021-08-03 14:00 | 00597605-020, 00597605-010 | 1.43d | 0d |  | Mechanical Fitter General [12 h] |  | UGL | T-MAC | PV |  | PV | GG |
| 00597605-035 |  | Install Pipe Preparation Machine - Feeder Pipe 282-P006 "A" Downstream Weld | 0.27d | 2021-08-03 02:00 | 2021-08-03 08:00 | 00597605-020 SS, 00597605-020 | 0.89d | 0d |  | Mechanical Fitter General [6 h] |  | UGL | T-MAC | PV |  | PV | GG |
| 00597605-080 |  | Install Pipe Preparation Machine - Feeder Pipe 282-P011 "A" Upstream Weld | 0.27d | 2021-08-03 02:00 | 2021-08-03 08:00 | 00597605-075, 00597605-035 SS | 0.98d | 0d |  | Mechanical Fitter General [6 h] | N1HAH - 1U BOILER SUPERHEATING SYSTEM | UGL | T-MAC | PV |  | PV | GG |
| 00597605-095 |  | Install Pipe Preparation Machine - Feeder Pipe 282-P011 "A" Downstream Weld | 0.27d | 2021-08-03 02:00 | 2021-08-03 08:00 | 00597605-075 SS, 00597605-080 SS | 0.98d | 0d |  | Mechanical Fitter General [6 h] |  | UGL | T-MAC | PV |  | PV | GG |
| 00597605-040 |  | Machine Out Old Weld - Feeder Pipe 282-P006 "A" Downstream Weld | 0.55d | 2021-08-03 08:00 | 2021-08-03 20:00 | 00597605-035 | 0.89d | 0d |  | Mechanical Fitter General [12 h] | N1HAH - 1U BOILER SUPERHEATING SYSTEM | UGL | T-MAC | PV |  | PV | GG |
| 00597605-085 |  | Machine Out Old Weld - Feeder Pipe 282-P011 "A" Upstream Weld | 0.55d | 2021-08-03 08:00 | 2021-08-03 20:00 | 00597605-080 | 1.07d | 0d |  | Mechanical Fitter General [12 h] |  | UGL | T-MAC | PV |  | PV | GG |
| 00597605-100 |  | Machine Out Old Weld - Feeder Pipe 282-P011 "A" Downstream Weld | 0.55d | 2021-08-03 08:00 | 2021-08-03 20:00 | 00597605-095 | 0.98d | 0d |  | Mechanical Fitter General [12 h] | N1HAH - 1U BOILER SUPERHEATING SYSTEM | UGL | T-MAC | PV |  | PV | GG |
| 00597605-030 |  | Sever Old Weld - Feeder Pipe 282-P006 "A" Upstream Weld | 0.09d | 2021-08-03 20:00 | 2021-08-03 22:00 | 00597605-025, 00597605-045 SS | 21.36d | 0d |  | Pressure Welder Big Bore [2 h] | N1HAH - 1U BOILER SUPERHEATING SYSTEM | UGL | T-MAC | PV |  | PV | GG |
| 00597605-045 |  | Sever Old Weld - Feeder Pipe 282-P006 "A" Downstream Weld - "A" and "B" Side | 0.09d | 2021-08-03 20:00 | 2021-08-03 22:00 | 00597605-040 | 1.61d | 0d |  | Pressure Welder Big Bore [2 h] |  | UGL | T-MAC | PV |  | PV | GG |
| 00597605-050 |  | Remove Scaffold to faciliate Feeder Pipe transfer | 0.27d | 2021-08-03 22:00 | 2021-08-04 07:00 | 00597605-045, 00597605-030 | 21.36d | 0d |  | Scaffolder [18 h] | N1HAH - 1U BOILER SUPERHEATING SYSTEM | PINKD | T-RGC | PV |  | MB |  |
| 00597605-090 |  | Sever Old Weld - Feeder Pipe 282-P011 "A" Upstream Weld | 0.09d | 2021-08-03 22:00 | 2021-08-04 01:00 | 00597605-085, 00597605-045 | 1.61d | 0d |  | Pressure Welder Big Bore [2 h] | N1HAH - 1U BOILER SUPERHEATING SYSTEM | UGL | T-MAC | PV |  | PV | GG |
| 00597605-105 |  | Sever Old Weld - Feeder Pipe 282-P011 "A" Downstream Weld | 0.09d | 2021-08-04 01:00 | 2021-08-04 03:00 | 00597605-100, 00597605-090 | 1.61d | 0d |  | Pressure Welder Big Bore [2 h] |  | UGL | T-MAC | PV |  | PV | GG |
| 00597605-110 |  | Remove Scaffold to faciliate Feeder Pipe transfer | 0.27d | 2021-08-04 03:00 | 2021-08-04 11:00 | 00597605-105 | 6.66d | 0d |  | Scaffolder [18 h] | N1HAH - 1U BOILER SUPERHEATING SYSTEM | PINKD | T-BOI | PV |  | MB |  |
| 00597605-055 |  | Remove Feeder Pipe, Store on Furnace Roof, Remove Rigging and Cap all Openings - Feeder Pipe 282-P006 "A" Downstream Wel | 0.09d | 2021-08-04 07:00 | 2021-08-04 09:00 | 00597605-050 | 21.36d | 0d |  | Rigger [4 h] |  | UGL | T-RGC | PV |  | MB | CT |
| 00597605-060 |  | Reinstall Scaffold removed to faciliate Feeder Pipe transfer | 0.27d | 2021-08-04 09:00 | 2021-08-04 15:00 | 00597605-055 | 21.36d |  |  | Scaffolder [18 h] | N1HAH - 1U BOILER SUPERHEATING SYSTEM | PINKD | T-RGC | PV |  | MB |  |
| 00597605-115 |  | Remove Feeder Pipe, Store on Furnace Roof, Remove Rigging and Cap all Openings - Feeder Pipe 282-P011 "A" Downstream Wel | 0.18d | 2021-08-04 11:00 | 2021-08-04 15:00 | 00597605-110 | 6.66d | 0d |  | Rigger [12 h] |  | UGL | T-RGC | PV |  | MB | CT |
| 00597605-120 |  | Reinstall Scaffold removed to faciliate Feeder Pipe transfer | 0.27d | 2021-08-04 15:00 | 2021-08-04 21:00 | 00597605-115 | 6.66d | 0d |  | Scaffolder [18 h] | N1HAH - 1U BOILER SUPERHEATING SYSTEM | PINKD | T-NDT | PV |  | MB |  |

| ID | WBS | Activity | Duration | Start | Finish | Predecessors | Total float | Free float | Calendar | Resources | Contractor - MJ | Work Groups | PKG - Co-ord 1 | Co-ordinator | UGL Sup. | KKS /Plant No. | Comments - 5TF21 |
| --- | --- | --- | --- | --- | --- | --- | --- | --- | --- | --- | --- | --- | --- | --- | --- | --- | --- |
|  | 2 | **"A" Side Manifold Vent Line - Removal** |  | 2021-08-06 09:00 | 2021-08-13 21:00 |  |  |  |  |  |  |  |  |  |  |  |  |
| 00597605-125 |  | Remove Vent Line MS01-747-15A to Allow Attemperator Removal - "A" Side | 0.09d | 2021-08-06 09:00 | 2021-08-06 11:00 | 00597605-145 | 10.66d | 6.18d |  | Pressure Welder Big Bore [2 h]; Rigger [2 h] | UGL | T-BOI | PV | PV | GG |  |  |
| 00597605-525 |  | Install Vent Line MS01-747-15A - "A" Side | 0.18d | 2021-08-13 15:00 | 2021-08-13 19:00 | 00597605-125, 00597605-340 | 4.48d | 0d |  | Pressure Welder Big Bore [4 h]; Rigger [2 h] | UGL | T-BOI | PV | PV | GG |  |  |
| 00597605-530 |  | Perform Pressure Tapping Line Welds NDT - Radiograph - Vent Line MS01-747-15A "A" Side | 0.09d | 2021-08-13 19:00 | 2021-08-13 21:00 | 00597605-525 | 5.52d | 4.27d | TPS-MJ-7d x 22hr Day/Night Shift | Non Destructive Testing [4 h] | ALS | T-NDT | PV | PV |  | N1HAH - 1U BOILER SUPERHEATING SYSTEM |  |
|  | 3 | **"A" Attemperator - Replacement** |  | 2021-07-30 15:00 | 2021-08-18 03:00 |  |  |  |  |  |  |  |  |  |  |  |  |
| 00597605-130 |  | Mark Upstream and Downstream Cut Positions - Attemperator Body and Sprayline | 0.27d | 2021-07-30 15:00 | 2021-07-30 21:00 | 00597605-065 | 0.43d | 0d |  | Pressure Welder Big Bore [12 h] | UGL | T-BOI | PV | PV | GG | N1HAH - 1U BOILER SUPERHEATING SYSTEM |  |
| 00597605-140 |  | Install Attemperator Body Support Rigging - Attemperator Body and Sprayline | 0.55d | 2021-07-30 15:00 | 2021-07-31 03:00 | 00597605-130 SS | 0.43d | 0d |  | Rigger [48 h] | UGL | T-RGC | MB | PV | CT | N1HAH - 1U BOILER SUPERHEATING SYSTEM |  |
| 00597605-135 |  | SCL Verification of Cut Positions - Attemperator Body and Sprayline | 0.14d | 2021-07-30 21:00 | 2021-07-31 00:00 | 00597605-130, 00597605-070 | 24.95d |  |  | Non Destructive Testing [6 h] | SCL | T-ENG | PV | PV |  |  |  |
| 00597605-150 |  | Install Pipe Preparation Machine - Sprayline | 0.55d | 2021-07-31 03:00 | 2021-07-31 17:00 | 00597605-140 | 0.43d | 0d |  | Mechanical Fitter General [12 h] | UGL | T-MAC | PV | PV | GG | N1HAH - 1U BOILER SUPERHEATING SYSTEM | 10 inch |
| 00597605-165 |  | Install Pipe Preparation Machine - Attemperator Body Upstream | 0.55d | 2021-07-31 03:00 | 2021-07-31 17:00 | 00597605-150 SS | 0.43d | 0d |  | Mechanical Fitter General [24 h]; Trades Assistant [12 h] | UGL | T-MAC | PV | PV | GG |  |  |
| 00597605-175 |  | Install Pipe Preparation Machine - Attemperator Body Downstream | 0.55d | 2021-07-31 03:00 | 2021-07-31 17:00 | 00597605-165 SS | 0.43d | 0d |  | Mechanical Fitter General [24 h]; Trades Assistant [12 h] | UGL | T-MAC | PV | PV | GG |  |  |
| 00597605-155 |  | Machine Out Old Weld - Sprayline at Reducer | 0.55d | 2021-07-31 17:00 | 2021-08-02 04:00 | 00597605-150 | 0.89d | 0d |  | Pressure Welder Big Bore [6 h]; Mechanical Fitter General [12 h] | UGL | T-MAC | PV | PV | GG |  |  |
| 00597605-170 |  | Machine Out Old Weld - Attemperator Body Upstream | 1.64d | 2021-07-31 17:00 | 2021-08-03 08:00 | 00597605-165 | 2.43d | 0.82d |  | Pressure Welder Big Bore [6 h]; Mechanical Fitter General [72 h]; Trades Assistant [36 h] | UGL | T-MAC | PV | PV | GG | N1HAH - 1U BOILER SUPERHEATING SYSTEM | 20 inch |
| 00597605-180 |  | Machine Out Old Weld - Attemperator Body Downstream | 1.64d | 2021-07-31 17:00 | 2021-08-03 08:00 | 00597605-175 | 0.43d | 0d |  | Pressure Welder Big Bore [6 h]; Mechanical Fitter General [72 h]; Trades Assistant [36 h] | UGL | T-MAC | PV | PV | GG | N1HAH - 1U BOILER SUPERHEATING SYSTEM | 20 inch |
| 00597605-160 |  | Machine Out Old Weld - Sprayline Upsteam | 0.55d | 2021-08-02 04:00 | 2021-08-02 16:00 | 00597605-155 | 0.89d | 0d |  | Pressure Welder Big Bore [6 h]; Mechanical Fitter General [12 h] | UGL | T-MAC | PV | PV | GG | N1HAH - 1U BOILER SUPERHEATING SYSTEM |  |
| 00597605-185 |  | Cut through Attemperator Body - Upstream & Downstream | 1.64d | 2021-08-04 03:00 | 2021-08-05 19:00 | 00597605-180, 00597605-170, 00597605-105 | 1.61d | 0d |  | Pressure Welder Big Bore [6 h]; Mechanical Fitter General [6 h]; Trades Assistant [36 h] | UGL | T-MAC | PV | PV | GG |  | air saw |
| 00597605-145 |  | Remove Attemperator Hanger, Hanger Rod and Store Correctly | 0.55d | 2021-08-05 19:00 | 2021-08-06 09:00 | 00597605-185 | 2.16d | 0d |  | Mechanical Fitter General [12 h]; Rigger [24 h] | UGL | T-RGC | MB | PV | CT |  |  |
| 00597605-190 |  | Rig Up and Remove Attemperator Bodies and Transport to Basement (200T Crane & Jib req) | 0.55d | 2021-08-05 19:00 | 2021-08-06 09:00 | 00597605-185, 00597605-160, 00597605-045 | 1.61d | 0d |  | Rigger [96 h] | UGL | T-RGC | MB | PV | CT | N1HAH - 1U BOILER SUPERHEATING SYSTEM |  |
| 00597605-195 |  | Clean up Weld prep Attemperator Body Upstream & Downstream | 0.09d | 2021-08-06 09:00 | 2021-08-06 11:00 | 00597605-190 | 19.41d | 0d |  | Pressure Welder Big Bore [4 h] | UGL | T-BOI | PV | PV | GG |  |  |
| 00597605-205 |  | Rig Up and Install New Attemperator Body - Transport from Basement | 0.55d | 2021-08-06 09:00 | 2021-08-06 21:00 | 00597605-190 | 1.61d | 0d |  | Rigger [96 h] | UGL | T-RGC | MB | PV | CT |  |  |
| 00597605-200 |  | Install Ez-Purge Dam Into the Upstream and Downstream Pipe - Attemperator Inlet and Outlet Pipes | 0.09d | 2021-08-06 11:00 | 2021-08-06 13:00 | 00597605-195 | 19.45d |  |  | Pressure Welder Big Bore [4 h] | UGL | T-BOI | PV | PV | GG | N1HAH - 1U BOILER SUPERHEATING SYSTEM |  |
| 00597605-285 |  | Install Ez-Purge Dam/Rice Paper Into the Upstream and Downstream Pipe - Sprayline at Nozzle Cap | 0.14d | 2021-08-06 11:00 | 2021-08-06 14:00 | 00597605-195 | 19.41d |  |  | Pressure Welder Big Bore [4 h] | UGL | T-BOI | PV | PV | GG |  |  |
| 00597605-210 |  | Install Attemperator Hanger and Hanger Rod | 0.27d | 2021-08-06 21:00 | 2021-08-07 03:00 | 00597605-205, 00597605-190, 00597605-145 | 1.61d | 0d |  | Mechanical Fitter General [6 h]; Rigger [12 h] | UGL | T-RGC | MB | PV | CT | N1HAH - 1U BOILER SUPERHEATING SYSTEM |  |
| 00597605-215 |  | Install Pipe Cage Clamp and Wedge Blocks - Attemperator Body Upstream | 0.55d | 2021-08-07 03:00 | 2021-08-07 17:00 | 00597605-210 | 1.61d | 0d |  | Pressure Welder Big Bore [24 h] | UGL | T-BOI | PV | PV | GG |  |  |
| 00597605-250 |  | Install Pipe Cage Clamp and Wedge Blocks - Attemperator Body Downstream | 0.55d | 2021-08-07 03:00 | 2021-08-07 17:00 | 00597605-210 | 1.61d | 0d |  | Pressure Welder Big Bore [24 h] | UGL | T-BOI | PV | PV | GG | N1HAH - 1U BOILER SUPERHEATING SYSTEM |  |
| 00597605-220 |  | Install Degause Metre Cabling and Connect - Attemperator Body Upstream | 0.55d | 2021-08-07 17:00 | 2021-08-09 04:00 | 00597605-215 | 1.61d | 0d |  | Pressure Welder Big Bore [12 h] | UGL | T-BOI | PV | PV | GG | N1HAH - 1U BOILER SUPERHEATING SYSTEM |  |
| 00597605-255 |  | Install Degause Metre Cabling and Connect - Attemperator Body Downstream | 0.55d | 2021-08-07 17:00 | 2021-08-09 04:00 | 00597605-250 | 1.61d | 0d |  | Pressure Welder Big Bore [12 h] | UGL | T-BOI | PV | PV | GG |  |  |
| 00597605-225 |  | Install Heat Treatment Equipment - Attemperator Body Upstream | 0.55d | 2021-08-09 04:00 | 2021-08-09 16:00 | 00597605-220 | 1.61d | 0d |  | Post Weld Heat Treat [24 h] | FOX | T-FOX | PV | PV | GG |  |  |
| 00597605-260 |  | Install Heat Treatment Equipment - Attemperator Body Downstream | 0.55d | 2021-08-09 04:00 | 2021-08-09 16:00 | 00597605-255 | 1.61d | 0d |  | Post Weld Heat Treat [24 h] | FOX | T-FOX | PV | PV | GG | N1HAH - 1U BOILER SUPERHEATING SYSTEM |  |
| 00597605-290 |  | Install Heat Treatment Equipment - Sprayline at Nozzle Cap | 0.55d | 2021-08-09 04:00 | 2021-08-09 16:00 | 00597605-260 SS | 4.11d | 0d |  | Post Weld Heat Treat [12 h] | FOX | T-FOX | PV | PV | GG | N1HAH - 1U BOILER SUPERHEATING SYSTEM |  |
| 00597605-230 |  | Install Welds - Attemperator Body Upstream | 3.27d | 2021-08-09 16:00 | 2021-08-13 01:00 | 00597605-225 | 1.61d | 0d |  | Pressure Welder Big Bore [96 h] | UGL | T-BOI | PV | PV | GG | N1HAH - 1U BOILER SUPERHEATING SYSTEM | 4 shifts + 1 shift for cooldown unwrap and ndt prep |
| 00597605-265 |  | Install Welds - Attemperator Body Downstream | 3.27d | 2021-08-09 16:00 | 2021-08-13 01:00 | 00597605-260, 00597605-210 | 1.61d | 0d |  | Pressure Welder Big Bore [96 h] | UGL | T-BOI | PV | PV | GG |  | 4 shifts + 1 shift for cooldown unwrap and ndt prep |
| 00597605-315 |  | Install Heat Treatment Equipment - Sprayline Upstream | 0.55d | 2021-08-09 16:00 | 2021-08-10 08:00 | 00597605-290 | 4.3d | 0.55d |  | Post Weld Heat Treat [12 h] | FOX | T-FOX | PV | PV | GG |  |  |
| 00597605-295 |  | Install Welds - Sprayline at Nozzle Cap | 0.55d | 2021-08-10 20:00 | 2021-08-11 11:00 | 00597605-290, 00597605-265 SS+1.09d | 3.66d | 0d |  | Pressure Welder Big Bore [12 h] | UGL | T-BOI | PV | PV | GG |  |  |
| 00597605-320 |  | Install Welds - Sprayline Upstream | 0.55d | 2021-08-10 20:00 | 2021-08-11 11:00 | 00597605-315, 00597605-295 SS | 3.75d | 0d |  | Pressure Welder Big Bore [12 h] | UGL | T-BOI | PV | PV | GG | N1HAH - 1U BOILER SUPERHEATING SYSTEM |  |
| 00597605-300 |  | Perform Pre Post Weld Heat Treatment NDT - Sprayline at Nozzle Cap | 0.27d | 2021-08-11 11:00 | 2021-08-11 17:00 | 00597605-295 | 5.48d | 0d | TPS-MJ-7d x 22hr Day/Night Shift | Non Destructive Testing [6 h] | ALS | T-NDT | PV | PV |  | N1HAH - 1U BOILER SUPERHEATING SYSTEM |  |
| 00597605-325 |  | Perform Pre Post Weld Heat Treatment NDT - Sprayline Upstream | 0.27d | 2021-08-11 11:00 | 2021-08-11 17:00 | 00597605-320 | 5.48d | 0d | TPS-MJ-7d x 22hr Day/Night Shift | Non Destructive Testing [6 h] | ALS | T-NDT | PV | PV |  |  |  |
| 00597605-305 |  | Perform Post Weld Heat Treatment - Sprayline at Nozzle Cap | 1.09d | 2021-08-11 17:00 | 2021-08-12 19:00 | 00597605-300 | 4.48d | 0d |  | Post Weld Heat Treat [24 h] | FOX | T-FOX | PV | PV | GG |  |  |
| 00597605-330 |  | Perform Post Weld Heat Treatment - Sprayline Upstream | 1.09d | 2021-08-11 17:00 | 2021-08-12 19:00 | 00597605-325 | 4.48d | 0d |  | Post Weld Heat Treat [24 h] | FOX | T-FOX | PV | PV | GG | N1HAH - 1U BOILER SUPERHEATING SYSTEM |  |
| 00597605-310 |  | Perform Post Weld Heat Treatment NDT - Sprayline at Nozzle Cap | 0.27d | 2021-08-12 19:00 | 2021-08-13 01:00 | 00597605-305 | 5.52d | 0d | TPS-MJ-7d x 22hr Day/Night Shift | Non Destructive Testing [6 h] | ALS | T-NDT | PV | PV |  | N1HAH - 1U BOILER SUPERHEATING SYSTEM |  |
| 00597605-335 |  | Perform Post Weld Heat Treatment NDT - Sprayline Upstream | 0.27d | 2021-08-12 19:00 | 2021-08-13 01:00 | 00597605-330 | 5.52d | 0d | TPS-MJ-7d x 22hr Day/Night Shift | Non Destructive Testing [6 h] | ALS | T-NDT | PV | PV |  |  |  |
| 00597605-235 |  | Perform Pre Post Weld Heat Treatment NDT - Attemperator Body Upstream | 0.82d | 2021-08-13 01:00 | 2021-08-13 21:00 | 00597605-230 | 1.66d | 0d | TPS-MJ-7d x 22hr Day/Night Shift | Non Destructive Testing [18 h] | ALS | T-NDT | PV | PV |  |  |  |
| 00597605-270 |  | Perform Pre Post Weld Heat Treatment NDT - Attemperator Body Downstream | 0.82d | 2021-08-13 01:00 | 2021-08-13 21:00 | 00597605-265 | 1.66d | 0d | TPS-MJ-7d x 22hr Day/Night Shift | Non Destructive Testing [18 h] | ALS | T-NDT | PV | PV |  | N1HAH - 1U BOILER SUPERHEATING SYSTEM |  |
| 00597605-340 |  | Remove Pipe Supports and Pipe Clamps | 0.55d | 2021-08-13 01:00 | 2021-08-13 15:00 | 00597605-335, 00597605-310 | 4.48d | 0d |  | Mechanical Fitter General [24 h] | UGL | T-BOI | PV | PV | GG | N1HAH - 1U BOILER SUPERHEATING SYSTEM |  |
| 00597605-242 |  | Contingent NDT Repairs | 1.09d | 2021-08-13 21:00 | 2021-08-14 23:00 | 00597605-235 | 1.25d | 0d |  |  | ALS | T-NDT | PV | PV |  | N1HAH - 1U BOILER SUPERHEATING SYSTEM |  |
| 00597605-277 |  | Contingent NDT Repairs | 1.09d | 2021-08-13 21:00 | 2021-08-14 23:00 | 00597605-270 | 1.25d | 0d |  |  | ALS | T-NDT | PV | PV |  | N1HAH - 1U BOILER SUPERHEATING SYSTEM |  |
| 00597605-240 |  | Perform Post Weld Heat Treatment - Attemperator Body Upstream | 1.64d | 2021-08-14 23:00 | 2021-08-17 14:00 | 00597605-235, 00597605-242 | 1.25d | 0d |  | Post Weld Heat Treat [72 h] | FOX | T-FOX | PV | PV | GG | N1HAH - 1U BOILER SUPERHEATING SYSTEM |  |
| 00597605-275 |  | Perform Post Weld Heat Treatment - Attemperator Body Downstream | 1.64d | 2021-08-14 23:00 | 2021-08-17 14:00 | 00597605-270, 00597605-277 | 1.25d | 0d |  | Post Weld Heat Treat [72 h] | FOX | T-FOX | PV | PV | GG |  |  |
| 00597605-245 |  | Perform Post Weld Heat Treatment NDT - Attemperator Body Upstream | 0.55d | 2021-08-17 14:00 | 2021-08-18 03:00 | 00597605-240 | 1.25d | 0d | TPS-MJ-7d x 22hr Day/Night Shift | Non Destructive Testing [12 h] | ALS | T-NDT | PV | PV |  |  |  |
| 00597605-280 |  | Perform Post Weld Heat Treatment NDT - Attemperator Body Downstream | 0.55d | 2021-08-17 14:00 | 2021-08-18 03:00 | 00597605-275 | 1.25d | 0d | TPS-MJ-7d x 22hr Day/Night Shift | Non Destructive Testing [12 h] | ALS | T-NDT | PV | PV |  | N1HAH - 1U BOILER SUPERHEATING SYSTEM |  |

| ID | WBS | Activity | Type | Duration | Start | Finish | Predecessors | Total float | Free float | Resources | KKS /Plant No. | Contractor - MJ | Work Groups | PKG - Co-ord 1 | Co-ordinator | UGL Sup. |
| --- | --- | --- | --- | --- | --- | --- | --- | --- | --- | --- | --- | --- | --- | --- | --- | --- |
|  | 4 | **"A" Side Feeder Pipes 282-P006 "A" - Installation** |  |  | 2021-08-04 03:00 | 2021-08-18 03:00 |  |  |  |  |  |  |  |  |  |  |
| 00597605-440 |  | Install Ez-Purge Dam Into the Upstream and Downstream Pipe - 282-P011 "A" Feeder Pipe |  | 0.09d | 2021-08-04 03:00 | 2021-08-04 07:00 | 00597605-105 | 9.75d | 0d | Pressure Welder Big Bore [4 h] | N1HAH - 1U BOILER SUPERHEATING SYSTEM | UGL | T-BOI | PV | PV | GG |
| 00597605-435 |  | Clean up Weld preps Upstream & Downstream |  | 0.09d | 2021-08-04 07:00 | 2021-08-04 09:00 | 00597605-105, 00597605-440 | 9.75d | 6.09d | Pressure Welder Big Bore [4 h] |  | UGL | T-BOI | PV | PV | GG |
| 00597605-345 |  | Clean up Weld preps Upstream & Downstream |  | 0.09d | 2021-08-04 21:00 | 2021-08-04 23:00 | 00597605-120 | 6.66d | 0d | Pressure Welder Big Bore [4 h] |  | UGL | T-BOI | PV | PV | GG |
| 00597605-350 |  | Install Ez-Purge Dam Into the Upstream and Downstream Pipe - 282-P006 "A" Feeder Pipe |  | 0.09d | 2021-08-04 23:00 | 2021-08-05 01:00 | 00597605-345 | 6.66d | 0d | Pressure Welder Big Bore [4 h] | N1HAH - 1U BOILER SUPERHEATING SYSTEM | UGL | T-BOI | PV | PV | GG |
| 00597605-355 |  | Remove Scaffold to faciliate Feeder Pipe transfer |  | 0.27d | 2021-08-05 01:00 | 2021-08-05 09:00 | 00597605-350 | 6.66d | 0d | Scaffolder [18 h] |  | PINKD |  | MB | PV |  |
| 00597605-360 |  | Install Rigging and Lift Feeder Pipe into Positin - 282-P006 "A" Feeder Pipe |  | 0.09d | 2021-08-05 09:00 | 2021-08-05 11:00 | 00597605-355 | 6.66d | 0d | Rigger [4 h] | N1HAH - 1U BOILER SUPERHEATING SYSTEM | UGL | T-RGC | MB | PV | CT |
| 00597605-365 |  | Reinstall Scaffold removed to faciliate Feeder Pipe transfer |  | 0.27d | 2021-08-05 11:00 | 2021-08-05 17:00 | 00597605-360 | 6.66d | 0d | Scaffolder [18 h] |  | PINKD |  | MB | PV |  |
| 00597605-370 |  | Install Pipe Cage Clamp and Wedge Blocks Upstream Weld Position- 282-P006 "A" Feeder Pipe |  | 0.27d | 2021-08-05 17:00 | 2021-08-05 23:00 | 00597605-365 | 6.66d | 0d | Pressure Welder Big Bore [12 h] | N1HAH - 1U BOILER SUPERHEATING SYSTEM | UGL | T-BOI | PV | PV | GG |
| 00597605-375 |  | Install Pipe Cage Clamp and Wedge Blocks Downstream Weld Position- 282-P006 "A" Feeder Pipe |  | 0.27d | 2021-08-05 23:00 | 2021-08-06 07:00 | 00597605-370 | 6.66d | 0d | Pressure Welder Big Bore [12 h] |  | UGL | T-BOI | PV | PV | GG |
| 00597605-465 |  | Install Pipe Cage Clamp and Wedge Blocks Downstream Weld Position- 282-P011 "A" Feeder Pipe |  | 0.27d | 2021-08-06 07:00 | 2021-08-06 13:00 | 00597605-375 | 7.02d | 2.82d | Pressure Welder Big Bore [12 h] |  | UGL | T-BOI | PV | PV | GG |
| 00597605-380 |  | Install Heat Treatment Equipment - Feeder Pipe 282-P006 "A" Upstream Weld |  | 0.55d | 2021-08-09 16:00 | 2021-08-10 08:00 | 00597605-375, 00597605-290 | 4.11d | 0d | Post Weld Heat Treat [12 h] | N1HAH - 1U BOILER SUPERHEATING SYSTEM | FOX | T-FOX | PV | PV | GG |
| 00597605-405 |  | Install Heat Treatment Equipment - Feeder Pipe 282-P006 "A" Downstream Weld |  | 0.55d | 2021-08-09 16:00 | 2021-08-10 08:00 | 00597605-380 SS | 4.11d | 0d | Post Weld Heat Treat [12 h] |  | FOX | T-FOX | PV | PV | GG |
| 00597605-445 |  | Remove Scaffold to faciliate Feeder Pipe transfer |  | 0.27d | 2021-08-09 16:00 | 2021-08-10 02:00 | 00597605-405 SS | 4.39d | 0.27d | Scaffolder [18 h] |  | PINKD |  | MB | PV |  |
| 00597605-450 |  | Install Rigging and Lift Feeder Pipe into Positin - 282-P011 "A" Feeder Pipe |  | 0.09d | 2021-08-10 08:00 | 2021-08-10 10:00 | 00597605-405, 00597605-445 | 4.11d | 0d | Rigger [4 h] | N1HAH - 1U BOILER SUPERHEATING SYSTEM | UGL | T-RGC | MB | PV | CT |
| 00597605-470 |  | Install Heat Treatment Equipment - Feeder Pipe 282-P011 "A" Upstream Weld |  | 0.55d | 2021-08-10 08:00 | 2021-08-10 20:00 | 00597605-465, 00597605-405 | 4.2d | 0d | Post Weld Heat Treat [12 h] | N1HAH - 1U BOILER SUPERHEATING SYSTEM | FOX | T-FOX | PV | PV | GG |
| 00597605-495 |  | Install Heat Treatment Equipment - Feeder Pipe 282-P011 "A" Downstream Weld |  | 0.55d | 2021-08-10 08:00 | 2021-08-10 20:00 | 00597605-470 SS | 4.2d | 0d | Post Weld Heat Treat [12 h] |  | FOX | T-FOX | PV | PV | GG |
| 00597605-455 |  | Reinstall Scaffold removed to faciliate Feeder Pipe transfer |  | 0.27d | 2021-08-10 10:00 | 2021-08-10 16:00 | 00597605-450 | 4.11d | 0d | Scaffolder [18 h] |  | PINKD |  | MB | PV |  |
| 00597605-460 |  | Install Pipe Cage Clamp and Wedge Blocks Upstream Weld Position- 282-P011 "A" Feeder Pipe |  | 0.27d | 2021-08-10 16:00 | 2021-08-10 22:00 | 00597605-455 | 4.11d | 0.45d | Pressure Welder Big Bore [12 h] | N1HAH - 1U BOILER SUPERHEATING SYSTEM | UGL | T-BOI | PV | PV | GG |
| 00597605-475 |  | Install Welds - Feeder Pipe 282-P011 "A" Upstream Weld |  | 1.27d | 2021-08-10 20:00 | 2021-08-12 03:00 | 00597605-470 | 4.3d | 0d | Pressure Welder Big Bore [24 h] |  | UGL | T-BOI | PV | PV | GG |
| 00597605-500 |  | Install Welds - Feeder Pipe 282-P011 "A" Downstream Weld |  | 1.27d | 2021-08-10 20:00 | 2021-08-12 03:00 | 00597605-495, 00597605-470 SS | 4.2d | 0d | Pressure Welder Big Bore [24 h] | N1HAH - 1U BOILER SUPERHEATING SYSTEM | UGL | T-BOI | PV | PV | GG |
| 00597605-385 |  | Install Welds - Feeder Pipe 282-P006 "A" Upstream Weld |  | 1.27d | 2021-08-11 11:00 | 2021-08-12 17:00 | 00597605-380, 00597605-320 | 3.75d | 0d | Pressure Welder Big Bore [24 h] |  | UGL | T-BOI | PV | PV | GG |
| 00597605-410 |  | Install Welds - Feeder Pipe 282-P006 "A" Downstream Weld |  | 1.27d | 2021-08-11 11:00 | 2021-08-12 17:00 | 00597605-405, 00597605-295, 00597605-450, 00597605-460, 00597605-435 | 3.66d | 0d | Pressure Welder Big Bore [24 h] | N1HAH - 1U BOILER SUPERHEATING SYSTEM | UGL | T-BOI | PV | PV | GG |
| 00597605-480 |  | Perform Pre Post Weld Heat Treatment NDT - Feeder Pipe 282-P011 "A" Upstream Weld |  | 0.55d | 2021-08-12 03:00 | 2021-08-12 17:00 | 00597605-475 | 4.3d | 0d | Non Destructive Testing [12 h] | N1HAH - 1U BOILER SUPERHEATING SYSTEM | ALS | T-NDT | PV | PV |  |
| 00597605-505 |  | Perform Pre Post Weld Heat Treatment NDT - Feeder Pipe 282-P011 "A" Downstream Weld |  | 0.55d | 2021-08-12 03:00 | 2021-08-12 17:00 | 00597605-500 | 4.2d | 0d | Non Destructive Testing [12 h] |  | ALS | T-NDT | PV | PV |  |
| 00597605-390 |  | Perform Pre Post Weld Heat Treatment NDT - Feeder Pipe 282-P006 "A" Upstream Weld |  | 0.55d | 2021-08-12 17:00 | 2021-08-13 07:00 | 00597605-385 | 3.75d | 0d | Non Destructive Testing [12 h] | N1HAH - 1U BOILER SUPERHEATING SYSTEM | ALS | T-NDT | PV | PV |  |
| 00597605-415 |  | Perform Pre Post Weld Heat Treatment NDT - Feeder Pipe 282-P006 "A" Downstream Weld |  | 0.55d | 2021-08-12 17:00 | 2021-08-13 07:00 | 00597605-410 | 3.66d | 0d | Non Destructive Testing [12 h] |  | ALS | T-NDT | PV | PV |  |
| 00597605-485 |  | Perform Post Weld Heat Treatment - Feeder Pipe 282-P011 "A" Upstream Weld |  | 1.09d | 2021-08-12 17:00 | 2021-08-13 19:00 | 00597605-480 | 4.3d | 0d | Post Weld Heat Treat [24 h] |  | FOX | T-FOX | PV | PV | GG |
| 00597605-510 |  | Perform Post Weld Heat Treatment - Feeder Pipe 282-P011 "A" Downstream Weld |  | 1.09d | 2021-08-12 17:00 | 2021-08-13 19:00 | 00597605-505 | 4.2d | 0d | Post Weld Heat Treat [24 h] | N1HAH - 1U BOILER SUPERHEATING SYSTEM | FOX | T-FOX | PV | PV | GG |
| 00597605-395 |  | Perform Post Weld Heat Treatment - Feeder Pipe 282-P006 "A" Upstream Weld |  | 1.09d | 2021-08-13 07:00 | 2021-08-14 09:00 | 00597605-390 | 3.75d | 0d | Post Weld Heat Treat [24 h] |  | FOX | T-FOX | PV | PV | GG |
| 00597605-420 |  | Perform Post Weld Heat Treatment - Feeder Pipe 282-P006 "A" Downstream Weld |  | 1.09d | 2021-08-13 07:00 | 2021-08-14 09:00 | 00597605-415 | 3.66d | 0d | Post Weld Heat Treat [24 h] | N1HAH - 1U BOILER SUPERHEATING SYSTEM | FOX | T-FOX | PV | PV | GG |
| 00597605-490 |  | Perform Post Weld Heat Treatment NDT - Feeder Pipe 282-P011 "A" Upstream Weld |  | 0.27d | 2021-08-13 19:00 | 2021-08-14 01:00 | 00597605-485 | 4.3d | 3.09d | Non Destructive Testing [6 h] | N1HAH - 1U BOILER SUPERHEATING SYSTEM | ALS | T-NDT | PV | PV |  |
| 00597605-515 |  | Perform Post Weld Heat Treatment NDT - Feeder Pipe 282-P011 "A" Downstream Weld |  | 0.27d | 2021-08-13 19:00 | 2021-08-14 01:00 | 00597605-510 | 4.2d | 0d | Non Destructive Testing [6 h] |  | ALS | T-NDT | PV | PV |  |
| 00597605-520 |  | Remove Rigging - Feeder Pipe 282-P011 "A" |  | 0.09d | 2021-08-14 01:00 | 2021-08-14 03:00 | 00597605-515 | 4.2d | 3d | Rigger [4 h] | N1HAH - 1U BOILER SUPERHEATING SYSTEM | UGL | T-RGC | MB | PV | CT |
| 00597605-400 |  | Perform Post Weld Heat Treatment NDT - Feeder Pipe 282-P006 "A" Upstream Weld |  | 0.27d | 2021-08-14 09:00 | 2021-08-14 15:00 | 00597605-395 | 3.75d | 2.55d | Non Destructive Testing [6 h] | N1HAH - 1U BOILER SUPERHEATING SYSTEM | ALS | T-NDT | PV | PV |  |
| 00597605-425 |  | Perform Post Weld Heat Treatment NDT - Feeder Pipe 282-P006 "A" Downstream Weld |  | 0.27d | 2021-08-14 09:00 | 2021-08-14 15:00 | 00597605-420 | 3.66d | 0d | Non Destructive Testing [6 h] |  | ALS | T-NDT | PV | PV |  |
| 00597605-430 |  | Remove Rigging - Feeder Pipe 282-P006 "A" |  | 0.09d | 2021-08-14 15:00 | 2021-08-14 17:00 | 00597605-425 | 3.66d | 2.45d | Rigger [4 h] | N1HAH - 1U BOILER SUPERHEATING SYSTEM | UGL | T-RGC | MB | PV | CT |
| 00597605-999 |  | A Side Complete | milestone | 0d | 2021-08-18 03:00 | 2021-08-18 03:00 | 00597605-520, 00597605-490, 00597605-430, 00597605-400, 00597605-245, 00597605-280, 00597605-340, 00597605-530 | 1.2d | 0d |  | N1HAH - 1U BOILER SUPERHEATING SYSTEM | UGL | T-RGC | MB | PV | CT |

| ID | WBS | Activity | Duration | Start | Finish | Predecessors | Total float | Free float | Resources | user_text9 | KKS /Plant No. | Comments - 5TF21 | Contractor - MJ | Work Groups | PKG - Co-ord 1 | Co-ordinator | UGL Sup. |
| --- | --- | --- | --- | --- | --- | --- | --- | --- | --- | --- | --- | --- | --- | --- | --- | --- | --- |
|  | 00597628 | **00597628 - P20307 SSH Attemperator B Replacement** |  | 2021-05-28 00:00 | 2021-08-18 11:00 |  |  |  |  |  |  |  |  |  |  |  |  |
|  | 1 | **"B" Side Feeder Pipes 282-P011 "B" - Removal** |  | 2021-05-28 00:00 | 2021-08-05 13:00 |  |  |  |  |  |  |  |  |  |  |  |  |
| 00597628-120 |  | Reinstall Scaffold removed to faciliate Feeder Pipe transfer | 0.27d | 2021-05-28 00:00 | 2021-05-28 08:00 |  | 79.68d |  | Scaffolder [18 h] | Duplicate to A Attemp 597605 | N1HAH - 1U BOILER SUPERHEATING SYSTEM | duplicate? | PINKD | T-NDT | MB | PV |  |
| 00597628-005 |  | Mark Upstream and Downstream Cut Positions - 282-P006 "B" Feeder Pipe | 0.09d | 2021-07-31 03:00 | 2021-07-31 07:00 | 00597628-130 | 3.34d | 0d | Pressure Welder Big Bore [4 h] |  |  |  | UGL | T-BOI | PV | PV | GG |
| 00597628-010 |  | SCL Engineering Verification of Cut Position - 282-P006 "B" Feeder Pipe | 0.09d | 2021-07-31 07:00 | 2021-07-31 09:00 | 00597628-005 | 3.34d | 0d | Non Destructive Testing [2 h] |  | N1HAH - 1U BOILER SUPERHEATING SYSTEM |  | SCL | T-ENG | PV | PV |  |
| 00597628-065 |  | Mark Upstream and Downstream Cut Positions - 282-P011 "B" Feeder Pipe | 0.09d | 2021-07-31 07:00 | 2021-07-31 09:00 | 00597628-005 | 3.43d | 0d | Pressure Welder Big Bore [4 h] |  |  |  | UGL | T-BOI | PV | PV | GG |
| 00597628-015 |  | Install Feeder Pipe Support Rigging - 282-P006 "B" Feeder Pipe | 0.09d | 2021-07-31 09:00 | 2021-07-31 11:00 | 00597628-010 | 3.34d | 2.45d | Rigger [4 h] |  |  |  | UGL | T-RGC | MB | PV | CT |
| 00597628-070 |  | SCL Engineering Verification of Cut Position - 282-P011 "B" Feeder Pipe | 0.09d | 2021-07-31 09:00 | 2021-07-31 11:00 | 00597628-065 | 3.43d | 0d | Non Destructive Testing [2 h] | Duplicate to A Attemp 597605 | N1HAH - 1U BOILER SUPERHEATING SYSTEM |  | SCL | T-ENG | PV | PV |  |
| 00597628-075 |  | Install Feeder Pipe Support Rigging - 282-P011 "B" Feeder Pipe | 0.09d | 2021-07-31 11:00 | 2021-07-31 13:00 | 00597628-070 | 3.43d | 2.36d | Rigger [4 h] |  |  |  | UGL | T-RGC | MB | PV | CT |
| 00597628-095 |  | Install Pipe Preparation Machine - Feeder Pipe 282-P011 "B" Downstream Weld | 0.27d | 2021-08-03 14:00 | 2021-08-03 20:00 | 00597605-025 | 1.43d | 0d | Mechanical Fitter General [6 h] |  |  |  | UGL | T-MAC | PV | PV | GG |
| 00597628-020 |  | Install Pipe Preparation Machine - Feeder Pipe 282-P006 "B" Upstream Weld | 0.27d | 2021-08-03 20:00 | 2021-08-04 03:00 | BFCRD-190, 00597628-015, 00597605-040 | 0.89d | 0d | Mechanical Fitter General [6 h] |  | N1HAH - 1U BOILER SUPERHEATING SYSTEM |  | UGL | T-MAC | PV | PV | GG |
| 00597628-035 |  | Install Pipe Preparation Machine - Feeder Pipe 282-P006 "B" Downstream Weld | 0.27d | 2021-08-03 20:00 | 2021-08-04 03:00 | 00597605-100 | 0.98d | 0d | Mechanical Fitter General [6 h] |  |  |  | UGL | T-MAC | PV | PV | GG |
| 00597628-080 |  | Install Pipe Preparation Machine - Feeder Pipe 282-P011 "B" Upstream Weld | 0.27d | 2021-08-03 20:00 | 2021-08-04 03:00 | 00597628-075, 00597605-085 | 1.07d | 0d | Mechanical Fitter General [6 h] | Duplicate to A Attemp 597605 | N1HAH - 1U BOILER SUPERHEATING SYSTEM |  | UGL | T-MAC | PV | PV | GG |
| 00597628-100 |  | Machine Out Old Weld - Feeder Pipe 282-P011 "B" Downstream Weld | 0.55d | 2021-08-03 20:00 | 2021-08-04 11:00 | 00597628-095 | 1.43d | 0.55d | Mechanical Fitter General [12 h] | Duplicate to A Attemp 597605 | N1HAH - 1U BOILER SUPERHEATING SYSTEM |  | UGL | T-MAC | PV | PV | GG |
| 00597628-025 |  | Machine Out Old Weld - Feeder Pipe 282-P006 "B" Upstream Weld | 0.55d | 2021-08-04 03:00 | 2021-08-04 17:00 | 00597628-020 | 0.89d | 0d | Mechanical Fitter General [12 h] |  |  |  | UGL | T-MAC | PV | PV | GG |
| 00597628-040 |  | Machine Out Old Weld - Feeder Pipe 282-P006 "B" Downstream Weld | 0.55d | 2021-08-04 03:00 | 2021-08-04 17:00 | 00597628-035 | 0.98d | 0.09d | Mechanical Fitter General [12 h] | Duplicate to A Attemp 597605 | N1HAH - 1U BOILER SUPERHEATING SYSTEM |  | UGL | T-MAC | PV | PV | GG |
| 00597628-085 |  | Machine Out Old Weld - Feeder Pipe 282-P011 "B" Upstream Weld | 0.55d | 2021-08-04 03:00 | 2021-08-04 17:00 | 00597628-080 | 1.07d | 0.18d | Mechanical Fitter General [12 h] |  |  |  | UGL | T-MAC | PV | PV | GG |
| 00597628-030 |  | Sever Old Weld - Feeder Pipe 282-P006 "B" Upstream Weld | 0.09d | 2021-08-04 17:00 | 2021-08-04 19:00 | 00597628-025 | 0.89d | 0d | Pressure Welder Big Bore [2 h] | Duplicate to A Attemp 597605 | N1HAH - 1U BOILER SUPERHEATING SYSTEM |  | UGL | T-MAC | PV | PV | GG |
| 00597628-045 |  | Sever Old Weld - Feeder Pipe 282-P006 "B" Downstream Weld | 0.09d | 2021-08-04 19:00 | 2021-08-04 21:00 | 00597628-040, 00597628-030 | 0.89d | 0d | Pressure Welder Big Bore [2 h] |  |  |  | UGL | T-MAC | PV | PV | GG |
| 00597628-050 |  | Remove Scaffold to faciliate Feeder Pipe transfer | 0.27d | 2021-08-04 21:00 | 2021-08-05 03:00 | 00597628-045 | 20.45d | 0d | Scaffolder [18 h] | Duplicate to A Attemp 597605 | N1HAH - 1U BOILER SUPERHEATING SYSTEM |  | PINKD | T-RGC | MB | PV |  |
| 00597628-090 |  | Sever Old Weld - Feeder Pipe 282-P011 "B" Upstream Weld | 0.09d | 2021-08-04 21:00 | 2021-08-04 23:00 | 00597628-085, 00597628-045 | 0.89d | 0d | Pressure Welder Big Bore [2 h] | Duplicate to A Attemp 597605 | N1HAH - 1U BOILER SUPERHEATING SYSTEM |  | UGL | T-MAC | PV | PV | GG |
| 00597628-105 |  | Sever Old Weld - Feeder Pipe 282-P011 "B" Downstream Weld | 0.09d | 2021-08-04 23:00 | 2021-08-05 01:00 | 00597628-100, 00597628-090 | 0.89d | 0d | Pressure Welder Big Bore [2 h] |  |  |  | UGL | T-MAC | PV | PV | GG |
| 00597628-110 |  | Remove Scaffold to faciliate Feeder Pipe transfer | 0.27d | 2021-08-05 01:00 | 2021-08-05 09:00 | 00597628-105 | 20.27d | 0d | Scaffolder [18 h] | Duplicate to A Attemp 597605 | N1HAH - 1U BOILER SUPERHEATING SYSTEM |  | PINKD | T-BOI | MB | PV |  |
| 00597628-055 |  | Remove Feeder Pipe, Store on Furnace Roof, Remove Rigging and Cap all Openings - Feeder Pipe 282-P006 "B" Downstream Wel | 0.09d | 2021-08-05 03:00 | 2021-08-05 07:00 | 00597628-050 | 20.45d | 0d | Rigger [4 h] |  |  |  | UGL | T-RGC | MB | PV | CT |
| 00597628-060 |  | Reinstall Scaffold removed to faciliate Feeder Pipe transfer | 0.27d | 2021-08-05 07:00 | 2021-08-05 13:00 | 00597628-055 | 20.45d |  | Scaffolder [18 h] | Duplicate to A Attemp 597605 | N1HAH - 1U BOILER SUPERHEATING SYSTEM |  | PINKD | T-RGC | MB | PV |  |
| 00597628-115 |  | Remove Feeder Pipe, Store on Furnace Roof, Remove Rigging and Cap all Openings - Feeder Pipe 282-P011 "B" Downstream Wel | 0.09d | 2021-08-05 09:00 | 2021-08-05 11:00 | 00597628-110 | 20.55d |  | Rigger [4 h] |  |  |  | UGL | T-RGC | MB | PV | CT |

| ID | WBS | Activity | Duration | Start | Finish | Predecessors | Total float | Free float | Calendar | Resources | Contractor - MJ | Work Groups | PKG - Co-ord 1 | Co-ordinator | UGL Sup. | KKS /Plant No. | user_text9 | Comments - 5TF21 |
| --- | --- | --- | --- | --- | --- | --- | --- | --- | --- | --- | --- | --- | --- | --- | --- | --- | --- | --- |
|  | 2 | **"B" Side Manifold Vent Line - Removal** |  | 2021-08-09 04:00 | 2021-08-15 00:30 |  |  |  |  |  |  |  |  |  |  |  |  |  |
| 00597628-125 |  | Remove Vent Line MS01-748-15A to Allow Attemperator Removal - "B" Side | 0.09d | 2021-08-09 04:00 | 2021-08-09 06:00 | 00597628-145 | 17.64d |  |  | Pressure Welder Big Bore [2 h]; Rigger [2 h] | UGL | T-BOI | PV | PV | GG |  |  |  |
| 00597628-525 |  | Install Vent Line MS01-748-15A - "B" Side | 0.18d | 2021-08-14 18:30 | 2021-08-14 22:30 | 00597628-340 | 11.93d | 0d |  | Pressure Welder Big Bore [4 h]; Rigger [2 h] | UGL | T-BOI | PV | PV | GG |  |  |  |
| 00597628-530 |  | Perform Pressure Tapping Line Welds NDT - Radiograph - Vent Line MS01-748-15A "B" Side | 0.09d | 2021-08-14 22:30 | 2021-08-15 00:30 | 00597628-145, 00597628-525 | 13.93d |  | TPS-MJ-7d x 22hr Day/Night Shift | Non Destructive Testing [4 h] | ALS | T-NDT | PV | PV |  | N1HAH - 1U BOILER SUPERHEATING SYSTEM |  |  |
|  | 3 | **"B" Attemperator - Replacement** |  | 2021-07-30 21:00 | 2021-08-18 11:00 |  |  |  |  |  |  |  |  |  |  |  |  |  |
| 00597628-130 |  | Mark Upstream and Downstream Cut Positions - Attemperator Body and Sprayline | 0.27d | 2021-07-30 21:00 | 2021-07-31 03:00 | 00597605-130, 00597641-220 | 2.48d | 0d |  | Pressure Welder Big Bore [12 h] | UGL | T-BOI | PV | PV | GG | N1HAH - 1U BOILER SUPERHEATING SYSTEM | Duplicate to A Attemp 597605 |  |
| 00597628-135 |  | SCL Verification of Cut Positions - Attemperator Body and Sprayline | 0.14d | 2021-07-31 03:00 | 2021-07-31 08:00 | 00597628-130 | 2.48d | 0d |  | Non Destructive Testing [6 h] | SCL | T-ENG | PV | PV |  |  |  |  |
| 00597628-165 |  | Install Pipe Preparation Machine - Attemperator Body Upstream | 0.55d | 2021-07-31 03:00 | 2021-07-31 17:00 | 00597605-175 SS | 0.98d | 0d |  | Mechanical Fitter General [24 h]; Trades Assistant [12 h] | UGL | T-MAC | PV | PV | GG |  |  |  |
| 00597628-140 |  | Install Attemperator Body Support Rigging - Attemperator Body and Sprayline | 0.55d | 2021-07-31 08:00 | 2021-07-31 20:00 | 00597628-135 | 2.48d | 1.5d |  | Rigger [48 h] | UGL | T-RGC | MB | PV | CT | N1HAH - 1U BOILER SUPERHEATING SYSTEM | Duplicate to A Attemp 597605 |  |
| 00597628-170 |  | Machine Out Old Weld - Attemperator Body Upstream | 1.64d | 2021-07-31 17:00 | 2021-08-03 08:00 | 00597628-165 | 0.98d | 0d |  | Pressure Welder Big Bore [6 h]; Mechanical Fitter General [72 h]; Trades Assistant [36 h] | UGL | T-MAC | PV | PV | GG | N1HAH - 1U BOILER SUPERHEATING SYSTEM | Duplicate to A Attemp 597605 | 20 inch |
| 00597628-150 |  | Install Pipe Preparation Machine - Sprayline | 0.55d | 2021-08-03 08:00 | 2021-08-03 20:00 | 00597628-140, 00597628-170 | 0.98d | 0d |  | Mechanical Fitter General [12 h] | UGL | T-MAC | PV | PV | GG | N1HAH - 1U BOILER SUPERHEATING SYSTEM | Duplicate to A Attemp 597605 |  |
| 00597628-175 |  | Install Pipe Preparation Machine - Attemperator Body Downstream | 0.55d | 2021-08-03 08:00 | 2021-08-03 20:00 | 00597605-180 | 0.43d | 0d |  | Mechanical Fitter General [24 h]; Trades Assistant [12 h] | UGL | T-MAC | PV | PV | GG |  |  |  |
| 00597628-155 |  | Machine Out Old Weld - Sprayline at Reducer | 0.55d | 2021-08-03 20:00 | 2021-08-04 11:00 | 00597628-150 | 0.98d | 0d |  | Pressure Welder Big Bore [6 h]; Mechanical Fitter General [12 h] | UGL | T-MAC | PV | PV | GG |  |  |  |
| 00597628-180 |  | Machine Out Old Weld - Attemperator Body Downstream | 1.64d | 2021-08-03 20:00 | 2021-08-05 13:00 | 00597628-175 | 0.43d | 0d |  | Pressure Welder Big Bore [6 h]; Mechanical Fitter General [72 h]; Trades Assistant [36 h] | UGL | T-MAC | PV | PV | GG | N1HAH - 1U BOILER SUPERHEATING SYSTEM |  | 20 inch |
| 00597628-160 |  | Machine Out Old Weld - Sprayline Upsteam | 0.55d | 2021-08-04 11:00 | 2021-08-04 23:00 | 00597628-155 | 0.98d | 0.55d |  | Pressure Welder Big Bore [6 h]; Mechanical Fitter General [12 h] | UGL | T-MAC | PV | PV | GG | N1HAH - 1U BOILER SUPERHEATING SYSTEM | Duplicate to A Attemp 597605 |  |
| 00597628-185 |  | Cut through Attemperator Body - Upstream & Downstream | 1.64d | 2021-08-05 13:00 | 2021-08-07 03:00 | 00597628-180, 00597628-105, 00597628-160, 00597628-045, 00597628-090 | 0.43d | 0d |  | Pressure Welder Big Bore [6 h]; Mechanical Fitter General [6 h]; Trades Assistant [36 h] | UGL | T-MAC | PV | PV | GG |  |  |  |
| 00597628-190 |  | Rig Up and Remove Attemperator Bodies and Transport to Basement (250T Crane & Jib req) | 0.55d | 2021-08-07 03:00 | 2021-08-07 17:00 | 00597628-185 | 0.43d | 0d |  | Rigger [96 h] | UGL | T-RGC | MB | PV | CT | N1HAH - 1U BOILER SUPERHEATING SYSTEM |  |  |
| 00597628-145 |  | Remove Attemperator Hanger, Hanger Rod and Store Correctly | 0.55d | 2021-08-07 17:00 | 2021-08-09 04:00 | 00597628-190 | 0.8d | 0d |  | Mechanical Fitter General [12 h]; Rigger [24 h] | UGL | T-RGC | MB | PV | CT |  |  |  |
| 00597628-195 |  | Clean up Weld prep Attemperator Body Upstream & Downstream | 0.09d | 2021-08-07 17:00 | 2021-08-07 19:00 | 00597628-190 | 0.43d | 0d |  | Pressure Welder Big Bore [4 h] | UGL | T-BOI | PV | PV | GG |  |  |  |
| 00597628-200 |  | Install Ez-Purge Dam Into the Upstream and Downstream Pipe - Attemperator Inlet and Outlet Pipes | 0.27d | 2021-08-07 19:00 | 2021-08-08 11:00 | 00597628-195 | 0.43d | 0d |  | Pressure Welder Big Bore [12 h] | UGL | T-BOI | PV | PV | GG | N1HAH - 1U BOILER SUPERHEATING SYSTEM |  |  |
| 00597628-285 |  | Install Ez-Purge Dam/Rice Paper Into the Upstream and Downstream Pipe - Sprayline at Nozzle Cap | 0.14d | 2021-08-07 19:00 | 2021-08-07 22:00 | 00597628-200 SS | 7.3d | 3.14d |  | Pressure Welder Big Bore [4 h] | UGL | T-BOI | PV | PV | GG |  |  |  |
| 00597628-205 |  | Rig Up and Install New Attemperator Body - Transport from Basement | 0.55d | 2021-08-08 11:00 | 2021-08-09 12:00 | 00597628-200 | 0.43d | 0d |  | Rigger [96 h] | UGL | T-RGC | MB | PV | CT |  |  |  |
| 00597628-210 |  | Install Attemperator Hanger and Hanger Rod | 0.27d | 2021-08-09 12:00 | 2021-08-09 18:00 | 00597628-205, 00597628-145 | 0.43d | 0d |  | Mechanical Fitter General [6 h]; Rigger [12 h] | UGL | T-RGC | MB | PV | CT | N1HAH - 1U BOILER SUPERHEATING SYSTEM |  |  |
| 00597628-215 |  | Install Pipe Cage Clamp and Wedge Blocks - Attemperator Body Upstream | 0.55d | 2021-08-09 18:00 | 2021-08-10 10:00 | 00597628-210 | 0.43d | 0d |  | Pressure Welder Big Bore [24 h] | UGL | T-BOI | PV | PV | GG |  |  |  |
| 00597628-250 |  | Install Pipe Cage Clamp and Wedge Blocks - Attemperator Body Downstream | 0.55d | 2021-08-09 18:00 | 2021-08-10 10:00 | 00597628-210 | 0.43d | 0d |  | Pressure Welder Big Bore [24 h] | UGL | T-BOI | PV | PV | GG | N1HAH - 1U BOILER SUPERHEATING SYSTEM |  |  |
| 00597628-220 |  | Install Degause Metre Cabling and Connect - Attemperator Body Upstream | 0.55d | 2021-08-10 10:00 | 2021-08-10 22:00 | 00597628-215 | 0.43d | 0d |  | Pressure Welder Big Bore [12 h] | UGL | T-BOI | PV | PV | GG | N1HAH - 1U BOILER SUPERHEATING SYSTEM |  |  |
| 00597628-255 |  | Install Degause Metre Cabling and Connect - Attemperator Body Downstream | 0.55d | 2021-08-10 10:00 | 2021-08-10 22:00 | 00597628-250 | 0.43d | 0d |  | Pressure Welder Big Bore [12 h] | UGL | T-BOI | PV | PV | GG |  |  |  |
| 00597628-225 |  | Install Heat Treatment Equipment - Attemperator Body Upstream | 0.55d | 2021-08-10 22:00 | 2021-08-11 13:00 | 00597628-220 | 0.43d | 0d |  | Post Weld Heat Treat [24 h] | FOX | T-FOX | PV | PV | GG |  |  |  |
| 00597628-260 |  | Install Heat Treatment Equipment - Attemperator Body Downstream | 0.55d | 2021-08-10 22:00 | 2021-08-11 13:00 | 00597628-255 | 0.43d | 0d |  | Post Weld Heat Treat [24 h] | FOX | T-FOX | PV | PV | GG | N1HAH - 1U BOILER SUPERHEATING SYSTEM |  |  |
| 00597628-230 |  | Install Welds - Attemperator Body Upstream | 3.27d | 2021-08-11 13:00 | 2021-08-14 19:00 | 00597628-225 | 0.43d | 0d |  | Pressure Welder Big Bore [96 h] | UGL | T-BOI | PV | PV | GG | N1HAH - 1U BOILER SUPERHEATING SYSTEM |  |  |
| 00597628-265 |  | Install Welds - Attemperator Body Downstream | 3.27d | 2021-08-11 13:00 | 2021-08-14 19:00 | 00597628-260 | 0.43d | 0d |  | Pressure Welder Big Bore [96 h] | UGL | T-BOI | PV | PV | GG |  |  |  |
| 00597628-290 |  | Install Heat Treatment Equipment - Sprayline at Nozzle Cap | 0.55d | 2021-08-11 13:00 | 2021-08-12 01:00 | 00597628-225 | 2.11d | 0d |  | Post Weld Heat Treat [12 h] | FOX | T-FOX | PV | PV | GG | N1HAH - 1U BOILER SUPERHEATING SYSTEM |  |  |
| 00597628-315 |  | Install Heat Treatment Equipment - Sprayline Upstream | 0.55d | 2021-08-11 13:00 | 2021-08-12 01:00 | 00597628-290 SS | 2.11d | 0d |  | Post Weld Heat Treat [12 h] | FOX | T-FOX | PV | PV | GG |  |  |  |
| 00597628-295 |  | Install Welds - Sprayline at Nozzle Cap | 0.55d | 2021-08-12 01:00 | 2021-08-12 15:00 | 00597628-290, 00597628-285 | 4.16d | 0d |  | Pressure Welder Big Bore [12 h] | UGL | T-BOI | PV | PV | GG |  |  |  |
| 00597628-320 |  | Install Welds - Sprayline Upstream | 0.55d | 2021-08-12 01:00 | 2021-08-12 15:00 | 00597628-315 | 3.48d | 0d |  | Pressure Welder Big Bore [12 h] | UGL | T-BOI | PV | PV | GG | N1HAH - 1U BOILER SUPERHEATING SYSTEM |  |  |
| 00597628-300 |  | Perform Pre Post Weld Heat Treatment NDT - Sprayline at Nozzle Cap | 0.27d | 2021-08-12 15:00 | 2021-08-12 22:00 | 00597628-295 | 5.11d | 0d | TPS-MJ-7d x 22hr Day/Night Shift | Non Destructive Testing [6 h] | ALS | T-NDT | PV | PV |  | N1HAH - 1U BOILER SUPERHEATING SYSTEM |  |  |
| 00597628-325 |  | Perform Pre Post Weld Heat Treatment NDT - Sprayline Upstream | 0.27d | 2021-08-12 15:00 | 2021-08-12 22:00 | 00597628-320 | 4.48d | 0d | TPS-MJ-7d x 22hr Day/Night Shift | Non Destructive Testing [6 h] | ALS | T-NDT | PV | PV |  |  |  |  |
| 00597628-305 |  | Perform Post Weld Heat Treatment - Sprayline at Nozzle Cap | 1.09d | 2021-08-12 22:00 | 2021-08-14 00:00 | 00597628-300 | 4.11d | 0d |  | Post Weld Heat Treat [24 h] | FOX | T-FOX | PV | PV | GG |  |  |  |
| 00597628-330 |  | Perform Post Weld Heat Treatment - Sprayline Upstream | 1.09d | 2021-08-12 22:00 | 2021-08-14 00:00 | 00597628-325 | 3.48d | 0d |  | Post Weld Heat Treat [24 h] | FOX | T-FOX | PV | PV | GG | N1HAH - 1U BOILER SUPERHEATING SYSTEM |  |  |
| 00597628-310 |  | Perform Post Weld Heat Treatment NDT - Sprayline at Nozzle Cap | 0.27d | 2021-08-14 00:00 | 2021-08-14 06:00 | 00597628-305 | 5.11d | 4.18d | TPS-MJ-7d x 22hr Day/Night Shift | Non Destructive Testing [6 h] | ALS | T-NDT | PV | PV |  | N1HAH - 1U BOILER SUPERHEATING SYSTEM |  |  |
| 00597628-335 |  | Perform Post Weld Heat Treatment NDT - Sprayline Upstream | 0.27d | 2021-08-14 00:00 | 2021-08-14 06:00 | 00597628-330 | 4.52d | 0d | TPS-MJ-7d x 22hr Day/Night Shift | Non Destructive Testing [6 h] | ALS | T-NDT | PV | PV |  |  |  |  |
| 00597628-340 |  | Remove Pipe Supports and Pipe Clamps | 0.55d | 2021-08-14 06:30 | 2021-08-14 18:30 | 00597628-335 | 3.59d | 0d |  | Mechanical Fitter General [24 h] | UGL | T-RGC | MB | PV | CT | N1HAH - 1U BOILER SUPERHEATING SYSTEM |  |  |
| 00597628-235 |  | Perform Pre Post Weld Heat Treatment NDT - Attemperator Body Upstream | 0.82d | 2021-08-14 19:00 | 2021-08-15 14:00 | 00597628-230 | 0.98d | 0d | TPS-MJ-7d x 22hr Day/Night Shift | Non Destructive Testing [18 h] | ALS | T-NDT | PV | PV |  |  |  |  |
| 00597628-270 |  | Perform Pre Post Weld Heat Treatment NDT - Attemperator Body Downstream | 0.82d | 2021-08-14 19:00 | 2021-08-15 14:00 | 00597628-265 | 0.98d | 0d | TPS-MJ-7d x 22hr Day/Night Shift | Non Destructive Testing [18 h] | ALS | T-NDT | PV | PV |  | N1HAH - 1U BOILER SUPERHEATING SYSTEM |  |  |
| 00597628-237 |  | Contingent Repairs | 0.68d | 2021-08-15 14:00 | 2021-08-16 06:00 | 00597628-235 | 0.98d | 0d | TPS-MJ-7d x 22hr Day/Night Shift | Non Destructive Testing | ALS | T-NDT | PV | PV |  |  |  |  |
| 00597628-272 |  | Contingent Repairs | 0.68d | 2021-08-15 14:00 | 2021-08-16 06:00 | 00597628-270 | 0.98d | 0d | TPS-MJ-7d x 22hr Day/Night Shift | Non Destructive Testing | ALS | T-NDT | PV | PV |  |  |  |  |
| 00597628-240 |  | Perform Post Weld Heat Treatment - Attemperator Body Upstream | 1.64d | 2021-08-16 06:00 | 2021-08-17 22:00 | 00597628-235, 00597628-237 | 0.89d | 0d |  | Post Weld Heat Treat [72 h] | FOX | T-FOX | PV | PV | GG | N1HAH - 1U BOILER SUPERHEATING SYSTEM |  |  |
| 00597628-275 |  | Perform Post Weld Heat Treatment - Attemperator Body Downstream | 1.64d | 2021-08-16 06:00 | 2021-08-17 22:00 | 00597628-270, 00597628-272 | 0.89d | 0d |  | Post Weld Heat Treat [72 h] | FOX | T-FOX | PV | PV | GG |  |  |  |
| 00597628-245 |  | Perform Post Weld Heat Treatment NDT - Attemperator Body Upstream | 0.55d | 2021-08-17 22:00 | 2021-08-18 11:00 | 00597628-240 | 0.93d | 0d | TPS-MJ-7d x 22hr Day/Night Shift | Non Destructive Testing [12 h] | ALS | T-NDT | PV | PV |  |  |  |  |
| 00597628-280 |  | Perform Post Weld Heat Treatment NDT - Attemperator Body Downstream | 0.55d | 2021-08-17 22:00 | 2021-08-18 11:00 | 00597628-275 | 0.93d | 0d | TPS-MJ-7d x 22hr Day/Night Shift | Non Destructive Testing [12 h] | ALS | T-NDT | PV | PV |  | N1HAH - 1U BOILER SUPERHEATING SYSTEM |  |  |

| ID | WBS | Activity | Type | Duration | Start | Finish | Predecessors | Total float | Free float | Calendar | Resources | Contractor - MJ | Work Groups | PKG - Co-ord 1 | Co-ordinator | UGL Sup. | KKS /Plant No. |
| --- | --- | --- | --- | --- | --- | --- | --- | --- | --- | --- | --- | --- | --- | --- | --- | --- | --- |
|  | 4 | **"B" Side Feeder Pipes 282-P006 "B" - Installation** |  |  | 2021-08-04 19:00 | 2021-08-18 11:00 |  |  |  |  |  |  |  |  |  |  |  |
| 00597628-345 |  | Clean up Weld preps Upstream & Downstream |  | 0.09d | 2021-08-04 19:00 | 2021-08-04 21:00 | 00597628-030 | 7.61d | 0d |  | Pressure Welder Big Bore [4 h] | UGL | T-BOI | PV | PV | GG |  |
| 00597628-350 |  | Install Ez-Purge Dam Into the Upstream and Downstream Pipe - 282-P006 "B" Feeder Pipe |  | 0.09d | 2021-08-04 21:00 | 2021-08-04 23:00 | 00597628-345 | 20.36d | 0.09d |  | Pressure Welder Big Bore [4 h] | UGL | T-BOI | PV | PV | GG | N1HAH - 1U BOILER SUPERHEATING SYSTEM |
| 00597628-435 |  | Clean up Weld preps Upstream & Downstream |  | 0.09d | 2021-08-04 21:00 | 2021-08-04 23:00 | 00597628-345 | 7.61d | 0d |  | Pressure Welder Big Bore [4 h] | UGL | T-BOI | PV | PV | GG |  |
| 00597628-440 |  | Install Ez-Purge Dam Into the Upstream and Downstream Pipe - 282-P011 "B" Feeder Pipe |  | 0.09d | 2021-08-04 23:00 | 2021-08-05 01:00 | 00597628-435 | 7.61d | 3.55d |  | Pressure Welder Big Bore [4 h] | UGL | T-BOI | PV | PV | GG | N1HAH - 1U BOILER SUPERHEATING SYSTEM |
| 00597628-355 |  | Remove Scaffold to faciliate Feeder Pipe transfer |  | 0.27d | 2021-08-05 01:00 | 2021-08-05 09:00 | 00597628-350, 00597628-110 SS | 20.27d | 3.27d |  | Scaffolder [18 h] | PINKD |  | MB | PV |  |  |
| 00597628-360 |  | Install Rigging and Lift Feeder Pipe into Positin - 282-P006 "B" Feeder Pipe |  | 0.09d | 2021-08-09 12:00 | 2021-08-09 14:00 | 00597628-355, 00597628-205 | 17d | 0d |  | Rigger [4 h] | UGL | T-RGC | MB | PV | CT | N1HAH - 1U BOILER SUPERHEATING SYSTEM |
| 00597628-370 |  | Install Pipe Cage Clamp and Wedge Blocks Upstream Weld Position- 282-P006 "B" Feeder Pipe |  | 0.27d | 2021-08-09 12:00 | 2021-08-09 18:00 | 00597628-345, 00597628-205 | 4.02d | 0d |  | Pressure Welder Big Bore [12 h] | UGL | T-BOI | PV | PV | GG | N1HAH - 1U BOILER SUPERHEATING SYSTEM |
| 00597628-445 |  | Remove Scaffold to faciliate Feeder Pipe transfer |  | 0.27d | 2021-08-09 12:00 | 2021-08-09 18:00 | 00597628-440, 00597628-205 | 4.07d | 0d |  | Scaffolder [18 h] | PINKD |  | MB | PV |  |  |
| 00597628-365 |  | Reinstall Scaffold removed to faciliate Feeder Pipe transfer |  | 0.27d | 2021-08-09 14:00 | 2021-08-09 20:00 | 00597628-360 | 17d |  |  | Scaffolder [18 h] | PINKD |  | MB | PV |  |  |
| 00597628-375 |  | Install Pipe Cage Clamp and Wedge Blocks Downstream Weld Position- 282-P006 "B" Feeder Pipe |  | 0.27d | 2021-08-09 18:00 | 2021-08-10 04:00 | 00597628-370 | 4.02d | 1.91d |  | Pressure Welder Big Bore [12 h] | UGL | T-BOI | PV | PV | GG |  |
| 00597628-450 |  | Install Rigging and Lift Feeder Pipe into Positin - 282-P011 "B" Feeder Pipe |  | 0.09d | 2021-08-09 18:00 | 2021-08-09 20:00 | 00597628-445 | 4.07d | 0d |  | Rigger [4 h] | UGL | T-RGC | MB | PV | CT | N1HAH - 1U BOILER SUPERHEATING SYSTEM |
| 00597628-455 |  | Reinstall Scaffold removed to faciliate Feeder Pipe transfer |  | 0.27d | 2021-08-09 20:00 | 2021-08-10 06:00 | 00597628-450 | 4.07d | 0d |  | Scaffolder [18 h] | PINKD |  | MB | PV |  |  |
| 00597628-460 |  | Install Pipe Cage Clamp and Wedge Blocks Upstream Weld Position- 282-P011 "B" Feeder Pipe |  | 0.27d | 2021-08-10 06:00 | 2021-08-10 12:00 | 00597628-455 | 4.07d | 0d |  | Pressure Welder Big Bore [12 h] | UGL | T-BOI | PV | PV | GG | N1HAH - 1U BOILER SUPERHEATING SYSTEM |
| 00597628-465 |  | Install Pipe Cage Clamp and Wedge Blocks Downstream Weld Position- 282-P011 "B" Feeder Pipe |  | 0.27d | 2021-08-10 12:00 | 2021-08-10 18:00 | 00597628-460 | 4.07d | 1.82d |  | Pressure Welder Big Bore [12 h] | UGL | T-BOI | PV | PV | GG |  |
| 00597628-380 |  | Install Heat Treatment Equipment - Feeder Pipe 282-P006 "B" Upstream Weld |  | 0.55d | 2021-08-12 01:00 | 2021-08-12 15:00 | 00597628-375, 00597628-315 | 2.11d | 0d |  | Post Weld Heat Treat [12 h] | FOX | T-FOX | PV | PV | GG | N1HAH - 1U BOILER SUPERHEATING SYSTEM |
| 00597628-405 |  | Install Heat Treatment Equipment - Feeder Pipe 282-P006 "B" Downstream Weld |  | 0.55d | 2021-08-12 01:00 | 2021-08-12 15:00 | 00597628-380 SS | 2.11d | 0d |  | Post Weld Heat Treat [12 h] | FOX | T-FOX | PV | PV | GG |  |
| 00597628-385 |  | Install Welds - Feeder Pipe 282-P006 "B" Upstream Weld |  | 1.09d | 2021-08-12 15:00 | 2021-08-13 17:00 | 00597628-380 | 2.8d | 0d |  | Pressure Welder Big Bore [48 h] | UGL | T-BOI | PV | PV | GG |  |
| 00597628-410 |  | Install Welds - Feeder Pipe 282-P006 "B" Downstream Weld |  | 1.09d | 2021-08-12 15:00 | 2021-08-13 17:00 | 00597628-405 | 2.66d | 0d |  | Pressure Welder Big Bore [48 h] | UGL | T-BOI | PV | PV | GG | N1HAH - 1U BOILER SUPERHEATING SYSTEM |
| 00597628-470 |  | Install Heat Treatment Equipment - Feeder Pipe 282-P011 "B" Upstream Weld |  | 0.55d | 2021-08-12 15:00 | 2021-08-13 03:00 | 00597628-405, 00597628-465 | 2.25d | 0d |  | Post Weld Heat Treat [12 h] | FOX | T-FOX | PV | PV | GG | N1HAH - 1U BOILER SUPERHEATING SYSTEM |
| 00597628-495 |  | Install Heat Treatment Equipment - Feeder Pipe 282-P011 "B" Downstream Weld |  | 0.55d | 2021-08-12 15:00 | 2021-08-13 03:00 | 00597628-405 | 2.11d | 0d |  | Post Weld Heat Treat [12 h] | FOX | T-FOX | PV | PV | GG |  |
| 00597628-475 |  | Install Welds - Feeder Pipe 282-P011 "B" Upstream Weld |  | 1.09d | 2021-08-13 03:00 | 2021-08-14 07:00 | 00597628-470 | 2.25d | 0d |  | Pressure Welder Big Bore [48 h] | UGL | T-BOI | PV | PV | GG |  |
| 00597628-500 |  | Install Welds - Feeder Pipe 282-P011 "B" Downstream Weld |  | 1.09d | 2021-08-13 03:00 | 2021-08-14 07:00 | 00597628-495 | 2.11d | 0d |  | Pressure Welder Big Bore [48 h] | UGL | T-BOI | PV | PV | GG | N1HAH - 1U BOILER SUPERHEATING SYSTEM |
| 00597628-390 |  | Perform Pre Post Weld Heat Treatment NDT - Feeder Pipe 282-P006 "B" Upstream Weld |  | 0.55d | 2021-08-13 17:00 | 2021-08-14 06:00 | 00597628-385 | 3.75d | 0d | TPS-MJ-7d x 22hr Day/Night Shift | Non Destructive Testing [12 h] | ALS | T-NDT | PV | PV |  | N1HAH - 1U BOILER SUPERHEATING SYSTEM |
| 00597628-415 |  | Perform Pre Post Weld Heat Treatment NDT - Feeder Pipe 282-P006 "B" Downstream Weld |  | 0.55d | 2021-08-13 17:00 | 2021-08-14 06:00 | 00597628-410 | 3.61d | 0d | TPS-MJ-7d x 22hr Day/Night Shift | Non Destructive Testing [12 h] | ALS | T-NDT | PV | PV |  |  |
| 00597628-395 |  | Perform Post Weld Heat Treatment - Feeder Pipe 282-P006 "B" Upstream Weld |  | 1.09d | 2021-08-14 06:30 | 2021-08-16 05:30 | 00597628-390 | 2.82d | 0d |  | Post Weld Heat Treat [24 h] | FOX | T-FOX | PV | PV | GG |  |
| 00597628-420 |  | Perform Post Weld Heat Treatment - Feeder Pipe 282-P006 "B" Downstream Weld |  | 1.09d | 2021-08-14 06:30 | 2021-08-16 05:30 | 00597628-415 | 2.73d | 0d |  | Post Weld Heat Treat [24 h] | FOX | T-FOX | PV | PV | GG | N1HAH - 1U BOILER SUPERHEATING SYSTEM |
| 00597628-480 |  | Perform Pre Post Weld Heat Treatment NDT - Feeder Pipe 282-P011 "B" Upstream Weld |  | 0.55d | 2021-08-14 07:00 | 2021-08-14 20:00 | 00597628-475 | 3.2d | 0d | TPS-MJ-7d x 22hr Day/Night Shift | Non Destructive Testing [12 h] | ALS | T-NDT | PV | PV |  | N1HAH - 1U BOILER SUPERHEATING SYSTEM |
| 00597628-505 |  | Perform Pre Post Weld Heat Treatment NDT - Feeder Pipe 282-P011 "B" Downstream Weld |  | 0.55d | 2021-08-14 07:00 | 2021-08-14 20:00 | 00597628-500 | 3.07d | 0d | TPS-MJ-7d x 22hr Day/Night Shift | Non Destructive Testing [12 h] | ALS | T-NDT | PV | PV |  |  |
| 00597628-485 |  | Perform Post Weld Heat Treatment - Feeder Pipe 282-P011 "B" Upstream Weld |  | 1.09d | 2021-08-14 20:00 | 2021-08-16 19:00 | 00597628-480 | 2.2d | 0d |  | Post Weld Heat Treat [24 h] | FOX | T-FOX | PV | PV | GG |  |
| 00597628-510 |  | Perform Post Weld Heat Treatment - Feeder Pipe 282-P011 "B" Downstream Weld |  | 1.09d | 2021-08-14 20:00 | 2021-08-16 19:00 | 00597628-505 | 2.11d | 0d |  | Post Weld Heat Treat [24 h] | FOX | T-FOX | PV | PV | GG | N1HAH - 1U BOILER SUPERHEATING SYSTEM |
| 00597628-400 |  | Perform Post Weld Heat Treatment NDT - Feeder Pipe 282-P006 "B" Upstream Weld |  | 0.27d | 2021-08-16 05:30 | 2021-08-16 12:30 | 00597628-395 | 2.86d | 1.93d | TPS-MJ-7d x 22hr Day/Night Shift | Non Destructive Testing [6 h] | ALS | T-NDT | PV | PV |  | N1HAH - 1U BOILER SUPERHEATING SYSTEM |
| 00597628-425 |  | Perform Post Weld Heat Treatment NDT - Feeder Pipe 282-P006 "B" Downstream Weld |  | 0.27d | 2021-08-16 05:30 | 2021-08-16 12:30 | 00597628-420 | 2.77d | 0d | TPS-MJ-7d x 22hr Day/Night Shift | Non Destructive Testing [6 h] | ALS | T-NDT | PV | PV |  |  |
| 00597628-430 |  | Remove Rigging - Feeder Pipe 282-P006 "B" |  | 0.09d | 2021-08-16 12:30 | 2021-08-16 14:30 | 00597628-425 | 2.64d | 1.7d |  | Rigger [4 h] | UGL | T-RGC | MB | PV | CT | N1HAH - 1U BOILER SUPERHEATING SYSTEM |
| 00597628-490 |  | Perform Post Weld Heat Treatment NDT - Feeder Pipe 282-P011 "B" Upstream Weld |  | 0.27d | 2021-08-16 19:00 | 2021-08-17 01:00 | 00597628-485 | 2.34d | 1.41d | TPS-MJ-7d x 22hr Day/Night Shift | Non Destructive Testing [6 h] | ALS | T-NDT | PV | PV |  | N1HAH - 1U BOILER SUPERHEATING SYSTEM |
| 00597628-515 |  | Perform Post Weld Heat Treatment NDT - Feeder Pipe 282-P011 "B" Downstream Weld |  | 0.27d | 2021-08-16 19:00 | 2021-08-17 01:00 | 00597628-510 | 2.25d | 0d | TPS-MJ-7d x 22hr Day/Night Shift | Non Destructive Testing [6 h] | ALS | T-NDT | PV | PV |  |  |
| 00597628-520 |  | Remove Rigging - Feeder Pipe 282-P011 "B" |  | 0.09d | 2021-08-17 01:00 | 2021-08-17 03:00 | 00597628-515 | 2.25d | 1.32d |  | Rigger [4 h] | UGL | T-RGC | MB | PV | CT | N1HAH - 1U BOILER SUPERHEATING SYSTEM |
| 00597628-999 |  | B Side Complete | milestone | 0d | 2021-08-18 11:00 | 2021-08-18 11:00 | 00597628-520, 00597628-490, 00597628-430, 00597628-400, 00597628-280, 00597628-245, 00597628-310, 00597628-340 | 0.8d | 0d | TPS-MJ-6d x 10hr Day Shift |  |  |  |  |  |  |  |

| ID | WBS | Activity | Duration | Start | Finish | Predecessors | Total float | Free float | Resources | KKS /Plant No. | Contractor - MJ | Work Groups | PKG - Co-ord 1 | Co-ordinator | UGL Sup. | Comments - 5TF21 |
| --- | --- | --- | --- | --- | --- | --- | --- | --- | --- | --- | --- | --- | --- | --- | --- | --- |
|  | 00597641 | **00597641 - P20307 Penthouse Work Prep & Setup** |  | 2021-05-28 00:00 | 2021-08-23 04:00 |  |  |  |  |  |  |  |  |  |  |  |
|  | 2 | **Attemperator Removal and Install Systems and Penthouse Access** |  | 2021-05-28 00:00 | 2021-07-30 11:00 |  |  |  |  |  |  |  |  |  |  |  |
| 00597641-010 |  | Apply for SWA | 0d | 2021-05-28 00:00 | 2021-05-28 00:00 |  | 74.59d | 0d |  | N1HAH - 1U BOILER SUPERHEATING SYSTEM | SCL | T-IBL | PV | PV |  |  |
| 00597641-020 |  | Order Spare Parts and Consumables | 0d | 2021-05-28 00:00 | 2021-05-28 00:00 | 00597641-010 | 74.59d | 0d |  | N1HAH - 1U BOILER SUPERHEATING SYSTEM | SCL | T-IBL | PV | PV | CT |  |
| 00597641-030 |  | Mobilise Work Area | 2.73d | 2021-05-28 00:00 | 2021-05-31 15:00 | 00597641-020 | 74.59d | 0d | Scaffolder [200 h] | N1HAH - 1U BOILER SUPERHEATING SYSTEM | UGL | T-RGC | MB | PV | CT |  |
| 00597641-140 |  | Mark Penthouse Roof Location for Cutting and Removal - "A" and "B" Side | 0.09d | 2021-05-28 00:00 | 2021-05-28 02:00 |  | 52.93d | 0d | Non Destructive Testing [2 h] |  | UGL | T-BOI | PV | PV | GG |  |
| 00597641-230 |  | Install boiler house structure sling guides and Cold Galv. - "A" Side | 0.27d | 2021-05-28 00:00 | 2021-05-28 08:00 |  | 52.93d | 0d | Mechanical Fitter General [12 h]; Rigger [12 h] |  | UGL | T-RGC | MB | PV | CT |  |
| 00597641-150 |  | Install Lifting Lugs to Allow Removal of Penthouse Roof - "A" and "B" Side | 0.09d | 2021-05-28 02:00 | 2021-05-28 04:00 | 00597641-140 | 52.93d | 0d | Pressure Welder Big Bore [4 h] |  | UGL | T-BOI | PV | PV | GG |  |
| 00597641-160 |  | NDT of Lifting Lugs On Penthouse Roof - "A" and "B" Side | 0.09d | 2021-05-28 04:00 | 2021-05-28 08:00 | 00597641-150 | 52.93d | 0d | Post Weld Heat Treat [2 h] |  | ALS | T-NDT | PV | PV |  |  |
| 00597641-170 |  | Install Rigging to Remove Penthouse Roof - "A" Side | 0.27d | 2021-05-28 08:00 | 2021-05-28 14:00 | 00597641-160, 00597641-230 | 52.93d | 51.68d | Rigger [12 h] |  | UGL | T-RGC | MB | PV | CT |  |
| 00597641-240 |  | Install boiler house structure sling guides and Cold Galv. - "B" Side | 0.27d | 2021-05-28 08:00 | 2021-05-28 14:00 | 00597641-230 | 56.16d | 0d | Mechanical Fitter General [12 h]; Rigger [12 h] |  | UGL | T-RGC | MB | PV | CT |  |
| 00597641-200 |  | Install Rigging to Remove Penthouse Roof - "B" Side | 0.27d | 2021-05-28 14:00 | 2021-05-28 20:00 | 00597641-240 | 56.16d | 51.41d | Rigger [12 h] |  | UGL | T-RGC | MB | PV | CT |  |
| 00597641-040 |  | Install Scaffold A & B Sides on Boiler House Roof, remove sheets, install C Supports, Cut out Purlin each side | 1.09d | 2021-05-31 15:00 | 2021-06-01 19:00 | 00597641-030 | 74.59d | 0d | Scaffolder [48 h]; SMW [72 h]; Trades Assistant [6 h] | N1HAH - 1U BOILER SUPERHEATING SYSTEM | PINKD | 5ZE | MB | PV |  |  |
| 00597641-050 |  | Scaffold up to FL60500 on Penthouse Roof A & B Sides | 0.82d | 2021-06-01 19:00 | 2021-06-02 16:00 | 00597641-040 | 74.59d | 0d | Scaffolder [108 h]; Trades Assistant [6 h] | N1HAH - 1U BOILER SUPERHEATING SYSTEM | PINKD | T-RGC | MB | PV | CT |  |
| 00597641-060 |  | Install boiler house structure sling guides and beam cleats and Cold Galv. - "A" Side | 0.09d | 2021-06-02 16:00 | 2021-06-02 18:00 | 00597641-050 | 74.59d | 0d | Pressure Welder Big Bore [2 h] | N1HAH - 1U BOILER SUPERHEATING SYSTEM | UGL | T-RGC | MB | PV | CT |  |
| 00597641-070 |  | Install boiler house structure sling guides and beam cleats and Cold Galv. - "B" Side | 0.09d | 2021-06-02 18:00 | 2021-06-02 20:00 | 00597641-060 | 74.59d | 0d | Pressure Welder Big Bore [2 h] | N1HAH - 1U BOILER SUPERHEATING SYSTEM | UGL | T-RGC | MB | PV | CT |  |
| 00597641-080 |  | Install Scaffold barriers on Penthouse Roof to edge and holes to be cut | 0.55d | 2021-06-02 20:00 | 2021-06-03 10:00 | 00597641-070 | 74.59d |  | Scaffolder [48 h]; Trades Assistant [6 h] | N1HAH - 1U BOILER SUPERHEATING SYSTEM | PINKD | T-RGC | MB | PV | CT |  |
| 00597641-090 |  | Open Penthouse Access Doors and Install Cooling Fans | 0.55d | 2021-07-24 06:30 | 2021-07-24 18:30 | BFCRD-110 | 1d | 0.57d | Mechanical Fitter General [24 h]; Trades Assistant [6 h] |  | UGL | T-BOI | PV | PV | GG | 1 |
| 00597641-100 |  | Install Penthouse Lighting | 0.55d | 2021-07-26 06:00 | 2021-07-26 18:00 | 00597641-090, BFCRD-190 | 0.43d | 0d | Electrician [24 h]; Trades Assistant [12 h] |  | UGL | T-BOI | PV | PV | GG | 2 |
| 00597641-115 |  | Clean Penthouse Internals Partial | 1.09d | 2021-07-26 12:00 | 2021-07-27 16:00 | 00597641-100 SS+0.27d | 0.43d | 0d | Trades Assistant [576 h] |  | CLEANAW | T-VAC | PV | PV |  | 2,6 |
| 00597641-125 |  | Install Access Scaffolds for Roof Access | 0.27d | 2021-07-27 16:00 | 2021-07-27 22:00 | 00597641-115 SS+1.09d | 0.43d | 0d | Scaffolder [192 h]; Trades Assistant [36 h] |  | PINKD |  | MB | PV |  | 3,5 |
| 00597641-135 |  | Remove Lagging and Cladding - Penthouse Roof Only | 0.27d | 2021-07-27 22:00 | 2021-07-28 07:00 | 00597641-125 SS, 00597641-125 FF, 00597641-125 | 0.43d | 0d | Lagger [48 h] |  | UGL | T-LAG | MB | PV | CT | 4 |
| 00597641-110 |  | Clean Penthouse Internals (Cleanaway) | 1.09d | 2021-07-28 07:00 | 2021-07-29 09:00 | 00597641-100 SS+0.27d, 00597641-115, 00597641-135 | 0.43d | 0d | Trades Assistant [576 h] |  | CLEANAW | T-VAC | PV | PV |  | 2,6 |
| 00597641-180 |  | Cut Penthouse Roof - "A" Side | 0.27d | 2021-07-28 07:00 | 2021-07-28 13:00 | 00597641-170, 00597641-135 | 1.25d | 0d | Pressure Welder Big Bore [12 h] |  | UGL | T-BOI | PV | PV | GG | 7 |
| 00597641-210 |  | Cut Penthouse Roof - "B" Side | 0.27d | 2021-07-28 07:00 | 2021-07-28 13:00 | 00597641-200, 00597641-180 SS, 00597641-135 | 4.75d | 0d | Pressure Welder Big Bore [12 h] |  | UGL | T-BOI | PV | PV | GG | 7 |
| 00597641-250 |  | Pin the SSH Outlet Manifold and PSH Outlet Pipe Support Hangers | 0.27d | 2021-07-28 07:00 | 2021-07-28 13:00 | 00597641-210 SS | 4.75d | 0d | Mechanical Fitter General [12 h] |  | UGL | T-RGC | MB | PV | CT | 10 |
| 00597641-190 |  | Move Penthouse Roof Section to Allow Access - "A" Side | 0.09d | 2021-07-28 13:00 | 2021-07-28 15:00 | 00597641-180, 00597641-180 FF | 27.36d |  | Rigger [4 h] |  | UGL | T-RGC | MB | PV | CT |  |
| 00597641-220 |  | Move Renthouse Roof Section to Allow Access - "B" Side | 0.09d | 2021-07-28 13:00 | 2021-07-28 15:00 | 00597641-210, 00597641-250 | 4.75d | 2.27d | Rigger [4 h] |  | UGL | T-RGC | MB | PV | CT |  |
| 00597641-260 |  | Install Pipe Support Brackets TSH & SSH Inlet Pipe Cross - "A" and "B" Side | 0.55d | 2021-07-28 13:00 | 2021-07-29 01:00 | 00597641-125, 00597641-180 | 1.25d | 0d | Mechanical Fitter General [6 h]; Rigger [36 h] |  | UGL | T-BOI | PV | PV | GG | 12 |
| 00597641-270 |  | Pin the Attemperator Pipe Support Hangers - "A" and "B" Side | 0.55d | 2021-07-29 01:00 | 2021-07-29 15:00 | 00597641-260 | 1.25d | 0.82d | Rigger [36 h] |  | UGL | T-RGC | MB | PV | CT | 12 |
| 00597641-120 |  | Install Access Scaffolds - Feeder Pipes, Attemperator and Sprayline Access | 1.09d | 2021-07-29 09:00 | 2021-07-30 11:00 | 00597641-110 SS+1.09d, 00597641-125 | 0.43d | 0d | Scaffolder [192 h]; Trades Assistant [36 h] |  | PINKD |  | MB | PV |  | 3,5 |
| 00597641-130 |  | Remove Lagging and Cladding - Feeder Pipes, Attemperator and Sprayline | 0.55d | 2021-07-29 21:00 | 2021-07-30 11:00 | 00597641-120 SS, 00597641-120 FF, 00597641-135 | 0.43d | 0d | Lagger [48 h] |  | UGL | T-LAG | MB | PV | CT | 4 |

| ID | WBS | Activity | Duration | Start | Finish | Predecessors | Total float | Free float | Resources | Contractor - MJ | PKG - Co-ord 1 | Co-ordinator | Work Groups | UGL Sup. |
| --- | --- | --- | --- | --- | --- | --- | --- | --- | --- | --- | --- | --- | --- | --- |
|  | 1 | **Disassembly of Attemperator Removal and Install Systems and Penthouse Closeup** |  | 2021-05-28 00:00 | 2021-08-23 04:00 |  |  |  |  |  |  |  |  |  |
| 0059761X-010 |  | Access Boiler Roof U/Side 7M Long 6.5m High A & B sides: 6 Scaff x 24hrs (144hrs) | 1.09d | 2021-05-28 00:00 | 2021-05-29 02:00 |  | 76.95d | 0d | Rigger [144 h] | PINKD | MB | PV |  |  |
| 0059761X-120 |  | Remove Penthouse Roof Rigging - "B" Side | 0.55d | 2021-05-28 00:00 | 2021-05-28 14:00 |  | 76.95d | 0d | Rigger [12 h]; Trades Assistant [12 h] | UGL | MB | PV | T-RGC | CT |
| 0059761X-240 |  | Demobilise Work Area | 2.18d | 2021-05-28 00:00 | 2021-05-30 14:00 |  | 77.23d | 0d | Scaffolder [192 h] | UGL | PV | PV | T-BOI | GG |
| 0059761X-130 |  | Remove Pins from SSO Outlet Manifold and Primary Superheater Pipe Support Hangers | 0.55d | 2021-05-28 14:00 | 2021-05-29 02:00 | 0059761X-120 | 76.95d | 0d | Mechanical Fitter General [12 h]; Trades Assistant [12 h] | UGL | MB | PV | T-RGC | CT |
| 0059761X-020 |  | Remove replace cut purlin 6.6m long: 3 x Sheet Metal workers x 16 hrs (48hrs) | 0.68d | 2021-05-29 02:00 | 2021-05-29 19:00 | 0059761X-010 | 76.95d | 0d | Lagger [48 h] | UGL | MB | PV | T-LAG | CT |
| 0059761X-140 |  | Remove Pipe Support Brackets TSH & SSH Inlet Pipe Cross - Removal and Install System | 0.55d | 2021-05-29 02:00 | 2021-05-29 16:00 | 0059761X-130 | 76.95d | 0d | Mechanical Fitter General [12 h]; Trades Assistant [12 h] | UGL | MB | PV | T-RGC | CT |
| 0059761X-150 |  | Remove SSH Manifold to Attemperator Support Beam - "A" and "B" Side | 0.27d | 2021-05-29 16:00 | 2021-05-29 22:00 | 0059761X-140 | 76.95d | 0d | Mechanical Fitter General [12 h] | UGL | MB | PV | T-RGC | CT |
| 0059761X-030 |  | Remove Scaffold Roof U/S: 6 scaff x 16 hrs. (96hrs) | 0.68d | 2021-05-29 19:00 | 2021-05-31 09:00 | 0059761X-020 | 76.95d | 0d | Rigger [96 h] | PINKD | MB | PV |  |  |
| 0059761X-160 |  | Remove Lifting Lugs Used to Remove Penthouse Roof - "A" and "B" Side | 0.55d | 2021-05-29 22:00 | 2021-05-31 09:00 | 0059761X-150 | 76.95d | 0d | Pressure Welder Big Bore [4 h]; Trades Assistant [12 h] | UGL | PV | PV | T-BOI | GG |
| 0059761X-250 |  | Clean Up Works Area | 0.55d | 2021-05-30 14:00 | 2021-05-31 15:00 | 0059761X-240 | 77.23d |  | Trades Assistant [24 h] | UGL | PV | PV | T-BOI | GG |
| 0059761X-040 |  | Install Sheet Roof and Remove Scaffold Edge Protection | 0.55d | 2021-05-31 09:00 | 2021-05-31 21:00 | 0059761X-030 | 76.95d |  | Rigger [24 h]; Lagger [12 h] | PINKD | MB | PV |  |  |
| 0059761X-170 |  | NDT of Lifting Lug Location On Penthouse Roof - "A" and "B" Side | 0.55d | 2021-05-31 09:00 | 2021-05-31 21:00 | 0059761X-160 | 76.95d |  | Non Destructive Testing [4 h]; Trades Assistant [12 h] | SCL | PV | PV | T-NDT |  |
| 0059761X-050 |  | Install Penthouse Roof - "A" Side | 0.09d | 2021-08-18 03:00 | 2021-08-18 07:00 | 00597605-999 | 1.2d | 0d | Rigger [4 h] | UGL | MB | PV | T-RGC | CT |
| 0059761X-060 |  | Weld In Penthouse Roof - "A" Side | 0.27d | 2021-08-18 07:00 | 2021-08-18 13:00 | 0059761X-050 | 8.91d | 0d | Pressure Welder Big Bore [12 h] | UGL | PV | PV | T-BOI | GG |
| 0059761X-090 |  | Install Penthouse Roof - "B" Side | 0.09d | 2021-08-18 11:00 | 2021-08-18 13:00 | 00597628-999 | 8.91d | 0d | Rigger [4 h] | UGL | MB | PV | T-RGC | CT |
| 0059761X-180 |  | Install Lagging and Cladding - Penthouse Roof, Feeder Pipes, Attemperator and Sprayline Access | 1.09d | 2021-08-18 11:00 | 2021-08-19 13:00 | 0059761X-050 SS, 00597628-999 | 0.93d | 0d | Lagger [48 h]; Trades Assistant [24 h] | UGL | MB | PV | T-LAG | CT |
| 0059761X-070 |  | NDT Penthouse Roof Seal Welds - "A" Side | 0.27d | 2021-08-18 13:00 | 2021-08-18 19:00 | 0059761X-060 | 8.91d | 0d | Non Destructive Testing [12 h] | SCL | PV | PV | T-NDT |  |
| 0059761X-100 |  | Weld In Penthouse Roof - "B" Side | 0.27d | 2021-08-18 13:00 | 2021-08-18 19:00 | 0059761X-090 | 8.91d | 0.45d | Pressure Welder Big Bore [12 h] | UGL | PV | PV | T-BOI | GG |
| 0059761X-080 |  | Remove Penthouse Roof Rigging - "A" Side | 0.27d | 2021-08-18 19:00 | 2021-08-19 01:00 | 0059761X-070 | 8.91d |  | Rigger [12 h] | UGL | MB | PV | T-RGC | CT |
| 0059761X-110 |  | NDT Penthouse Roof Seal Welds - "B" Side | 0.27d | 2021-08-19 07:00 | 2021-08-19 13:00 | 0059761X-100, 0059761X-180 FF | 8.45d |  | Non Destructive Testing [12 h]; Trades Assistant [12 h] | SCL | PV | PV | T-NDT |  |
| 0059761X-190 |  | Remove Scaffold barriers on Penthouse Roof to edge and holes | 0.55d | 2021-08-19 13:00 | 2021-08-20 01:00 | 0059761X-180 | 0.93d | 0d | Mechanical Fitter General [24 h]; Trades Assistant [6 h] | PINKD | MB | PV |  |  |
| 0059761X-200 |  | Remove Access Scaffolds - Penthouse Roof, Feeder Pipes, Attemperator and Sprayline Access | 1.09d | 2021-08-20 01:00 | 2021-08-21 03:00 | 0059761X-190 | 0.93d | 0d | Scaffolder [96 h]; Trades Assistant [24 h] | PINKD | MB | PV |  |  |
| 0059761X-210 |  | Clean Penthouse Internals | 0.55d | 2021-08-21 03:00 | 2021-08-21 17:00 | 0059761X-200 | 0.93d | 0d | Electrician [24 h]; Trades Assistant [12 h] | UGL | PV | PV | T-BOI | GG |
| 0059761X-220 |  | Remove Penthouse Lighting | 0.55d | 2021-08-21 03:00 | 2021-08-21 17:00 | 0059761X-210 SS, 0059761X-210 FF | 0.93d | 0d | Electrician [24 h]; Trades Assistant [12 h] | UGL | PV | PV | T-BOI | GG |
| 0059761X-230 |  | Close Penthouse Access Doors and Remove Cooling Fans | 0.55d | 2021-08-21 17:00 | 2021-08-23 04:00 | 0059761X-220 | 0.93d | 0.5d | Mechanical Fitter General [24 h]; Trades Assistant [12 h] | UGL | PV | PV | T-BOI | GG |

| ID | WBS | Activity | Duration | Start | Finish | Predecessors | Total float | Free float | Calendar | KKS /Plant No. | Contractor - MJ | Work Groups | Co-ordinator |
| --- | --- | --- | --- | --- | --- | --- | --- | --- | --- | --- | --- | --- | --- |
|  | 00599479 | **00599479 - P20307 SSH Attemperator Overhead Costs** |  | 2021-05-28 07:00 | 2021-05-28 07:00 |  |  |  |  |  |  |  |  |
| 00599479-010 |  | HSE Advice & Coverage | 0d | 2021-05-28 07:00 | 2021-05-28 07:00 |  | 72d |  | TPS-MJ-6d x 10hr Day Shift | N1HAH - 1U BOILER SUPERHEATING SYSTEM | SCL | T-ADM | EB |
| 00599479-020 |  | OH Management Team Costs | 0d | 2021-05-28 07:00 | 2021-05-28 07:00 |  | 72d |  | TPS-MJ-6d x 10hr Day Shift | N1HAH - 1U BOILER SUPERHEATING SYSTEM | SCL | T-ADM | EB |
| 00599479-030 |  | Radiography Safety Assistants | 0d | 2021-05-28 07:00 | 2021-05-28 07:00 |  | 72d |  | TPS-MJ-6d x 10hr Day Shift | N1HAH - 1U BOILER SUPERHEATING SYSTEM | SCL | T-ADM | EB |
| 00599479-040 |  | FRT/Nurse DS NS Coverage | 0d | 2021-05-28 07:00 | 2021-05-28 07:00 |  | 72d |  | TPS-MJ-6d x 10hr Day Shift | N1HAH - 1U BOILER SUPERHEATING SYSTEM | SCL | T-ADM | EB |
| 00599479-050 |  | Inductions & Training | 0d | 2021-05-28 07:00 | 2021-05-28 07:00 |  | 72d |  | TPS-MJ-6d x 10hr Day Shift | N1HAH - 1U BOILER SUPERHEATING SYSTEM | SCL | T-ADM | EB |
| 00599479-060 |  | Office, Crib and Facilities Cleaning | 0d | 2021-05-28 07:00 | 2021-05-28 07:00 |  | 72d |  | TPS-MJ-6d x 10hr Day Shift | N1HAH - 1U BOILER SUPERHEATING SYSTEM | F | 5ZCF | EB |
| 00599479-070 |  | Wash Boiler Pre-Outage | 0d | 2021-05-28 07:00 | 2021-05-28 07:00 |  | 72d |  | TPS-MJ-6d x 10hr Day Shift | N1HAH - 1U BOILER SUPERHEATING SYSTEM | UGL | T-CLE | EB |
| 00599479-080 |  | Canteen Coverage for Longer Shifts | 0d | 2021-05-28 07:00 | 2021-05-28 07:00 |  | 72d |  | TPS-MJ-6d x 10hr Day Shift | N1HAH - 1U BOILER SUPERHEATING SYSTEM | SCL | T-ADM | EB |
| 00599479-090 |  | AOD Testing for Forced Outage Work Force | 0d | 2021-05-28 07:00 | 2021-05-28 07:00 |  | 72d |  | TPS-MJ-6d x 10hr Day Shift | N1HAH - 1U BOILER SUPERHEATING SYSTEM | SCL | 15112 | EB |
| 00599479-100 |  | PPE & General Consumables | 0d | 2021-05-28 07:00 | 2021-05-28 07:00 |  | 72d |  | TPS-MJ-6d x 10hr Day Shift | N1HAH - 1U BOILER SUPERHEATING SYSTEM | SCL | T-ADM | EB |
| 00599479-110 |  | Fuel for Vehicles & Mobile Plant | 0d | 2021-05-28 07:00 | 2021-05-28 07:00 |  | 72d |  | TPS-MJ-6d x 10hr Day Shift | N1HAH - 1U BOILER SUPERHEATING SYSTEM | SCL | T-ADM | EB |
|  | P21005 | **Boiler Steam Pipe System - Weld Defects Repair** |  | 2021-05-28 07:00 | 2021-07-27 09:00 |  |  |  |  |  |  |  |  |
|  | 00597658 | **00597658 - P21005 Piping to Safety Vlv Noz Weld Rep** |  | 2021-05-28 07:00 | 2021-07-27 09:00 |  |  |  |  |  |  |  |  |
| 00597658-010 |  | Order Spares | 0d | 2021-05-28 07:00 | 2021-05-28 07:00 |  | 66.4d | 45d | TPS-MJ-6d x 10hr Day Shift | N1LBA10 - 1U MAIN STEAM PIPE SYSTEM | SCL | T-IBL | EB |
| 00597658-020 |  | SWA Application | 0d | 2021-07-26 07:00 | 2021-07-26 07:00 | 00597658-010, BFCRD-190 | 21.4d | 0d | TPS-MJ-6d x 10hr Day Shift | N1LBA10 - 1U MAIN STEAM PIPE SYSTEM | SCL | T-IBL | EB |
| 00597658-030 |  | Clean Penthouse Internals (Cleanaway) | 0d | 2021-07-26 07:00 | 2021-07-26 07:00 | 00597658-020 | 21.4d | 0d | TPS-MJ-6d x 10hr Day Shift | N1LBA10 - 1U MAIN STEAM PIPE SYSTEM | CLEANAW | T-VAC | EB |
| 00597658-040 |  | Install Access Scaffolds | 0d | 2021-07-26 07:00 | 2021-07-26 07:00 | 00597658-030 | 21.4d | 0d | TPS-MJ-6d x 10hr Day Shift | N1LBA10 - 1U MAIN STEAM PIPE SYSTEM | PINKD | T-RGC | EB |
| 00597658-050 |  | Remove Lagging and Cladding | 0d | 2021-07-26 07:00 | 2021-07-26 07:00 | 00597658-040 | 21.4d | 0d | TPS-MJ-6d x 10hr Day Shift | N1LBA10 - 1U MAIN STEAM PIPE SYSTEM | UGL | T-LAG | EB |
| 00597658-060 |  | Install Pin into Pipe Support Hangers | 0d | 2021-07-26 07:00 | 2021-07-26 07:00 | 00597658-050 | 21.4d | 0d | TPS-MJ-6d x 10hr Day Shift | N1LBA10 - 1U MAIN STEAM PIPE SYSTEM | UGL | T-BOI | EB |
| 00597658-070 |  | Install Pipe Support System | 0d | 2021-07-26 07:00 | 2021-07-26 07:00 | 00597658-060 | 21.4d | 0d | TPS-MJ-6d x 10hr Day Shift | N1LBA10 - 1U MAIN STEAM PIPE SYSTEM | UGL | T-BOI | EB |
| 00597658-080 |  | Remove cracking from Weld | 0d | 2021-07-26 07:00 | 2021-07-26 07:00 | 00597658-070 | 21.4d | 0d | TPS-MJ-6d x 10hr Day Shift | N1LBA10 - 1U MAIN STEAM PIPE SYSTEM | UGL | T-BOI | EB |
| 00597658-090 |  | Install Heat Treatment Equipment | 0d | 2021-07-26 07:00 | 2021-07-26 07:00 | 00597658-080 | 21.4d | 0d | TPS-MJ-6d x 10hr Day Shift | N1LBA10 - 1U MAIN STEAM PIPE SYSTEM | FOX | T-FOX | EB |
| 00597658-100 |  | Repair Branch Weld | 0d | 2021-07-26 07:00 | 2021-07-26 07:00 | 00597658-090 | 21.4d | 0d | TPS-MJ-6d x 10hr Day Shift | N1LBA10 - 1U MAIN STEAM PIPE SYSTEM | UGL | T-BOI | EB |
| 00597658-110 |  | Perform Pre Post Weld Heat Treatment NDT | 0d | 2021-07-26 07:00 | 2021-07-26 07:00 | 00597658-100 | 21.4d | 0d | TPS-MJ-6d x 10hr Day Shift | N1LBA10 - 1U MAIN STEAM PIPE SYSTEM | ALS | T-NDT | EB |
| 00597658-120 |  | Perform Post Weld Heat Treatment | 0d | 2021-07-26 07:00 | 2021-07-26 07:00 | 00597658-110 | 21.4d | 0d | TPS-MJ-6d x 10hr Day Shift | N1LBA10 - 1U MAIN STEAM PIPE SYSTEM | FOX | T-FOX | EB |
| 00597658-130 |  | Perform Post Weld Heat Treatment NDT | 0d | 2021-07-26 07:00 | 2021-07-26 07:00 | 00597658-120 | 21.4d | 0d | TPS-MJ-6d x 10hr Day Shift | N1LBA10 - 1U MAIN STEAM PIPE SYSTEM | ALS | T-NDT | EB |
| 00597658-140 |  | Remove Pipe Support System | 0d | 2021-07-26 07:00 | 2021-07-26 07:00 | 00597658-130 | 21.4d | 0d | TPS-MJ-6d x 10hr Day Shift | N1LBA10 - 1U MAIN STEAM PIPE SYSTEM | UGL | T-BOI | EB |
| 00597658-150 |  | Remove Pin from Pipe Support Hangers | 0d | 2021-07-26 07:00 | 2021-07-26 07:00 | 00597658-140 | 21.4d | 0d | TPS-MJ-6d x 10hr Day Shift | N1LBA10 - 1U MAIN STEAM PIPE SYSTEM | UGL | T-BOI | EB |
| 00597658-160 |  | Install Lagging and Cladding | 0d | 2021-07-26 07:00 | 2021-07-26 07:00 | 00597658-150 | 21.4d | 0d | TPS-MJ-6d x 10hr Day Shift | N1LBA10 - 1U MAIN STEAM PIPE SYSTEM | UGL | T-LAG | EB |
| 00597658-170 |  | Remove Access Scaffolds | 0d | 2021-07-26 07:00 | 2021-07-26 07:00 | 00597658-160 | 21.4d | 0d | TPS-MJ-6d x 10hr Day Shift | N1LBA10 - 1U MAIN STEAM PIPE SYSTEM | PINKD | T-RGC | EB |
| 00597658-180 |  | Clean Penthouse Internals | 0d | 2021-07-26 07:00 | 2021-07-26 07:00 | 00597658-170 | 21.4d | 0d | TPS-MJ-6d x 10hr Day Shift | N1LBA10 - 1U MAIN STEAM PIPE SYSTEM | UGL | T-BOI | EB |
| 00597658-190 |  | Clean Up Works Area | 0d | 2021-07-26 07:00 | 2021-07-26 07:00 | 00597658-180 | 27d |  | TPS-MJ-6d x 10hr Day Shift | N1LBA10 - 1U MAIN STEAM PIPE SYSTEM | UGL | T-BOI | EB |
| 00597658-200 |  | 00597658-200 - Return SWA | 1.1d | 2021-07-26 07:00 | 2021-07-27 09:00 | 00597658-180 | 21.4d | 21.2d | TPS-MJ-6d x 10hr Day Shift |  |  |  |  |

| ID | WBS | Activity | Duration | Start | Finish | Predecessors | Total float | Free float | Calendar | KKS /Plant No. | Contractor - MJ | Work Groups | Co-ordinator |
| --- | --- | --- | --- | --- | --- | --- | --- | --- | --- | --- | --- | --- | --- |
|  | 00597666 | **00597666 - P21005 Header to Hi Energy Pipe Weld Rep** |  | 2021-05-28 07:00 | 2021-07-27 09:00 |  |  |  |  |  |  |  |  |
| 00597666-010 |  | Order Spares | 0d | 2021-05-28 07:00 | 2021-05-28 07:00 |  | 66.4d | 45d | TPS-MJ-6d x 10hr Day Shift | N1LBA10 - 1U MAIN STEAM PIPE SYSTEM | SCL | T-IBL | EB |
| 00597666-020 |  | SWA Application | 0d | 2021-07-26 07:00 | 2021-07-26 07:00 | 00597666-010, BFCRD-190 | 21.4d | 0d | TPS-MJ-6d x 10hr Day Shift | N1LBA10 - 1U MAIN STEAM PIPE SYSTEM | SCL | T-IBL | EB |
| 00597666-030 |  | Clean Penthouse Internals (Cleanaway) | 0d | 2021-07-26 07:00 | 2021-07-26 07:00 | 00597666-020 | 21.4d | 0d | TPS-MJ-6d x 10hr Day Shift | N1LBA10 - 1U MAIN STEAM PIPE SYSTEM | CLEANAW | T-VAC | EB |
| 00597666-040 |  | Install Access Scaffolds | 0d | 2021-07-26 07:00 | 2021-07-26 07:00 | 00597666-030 | 21.4d | 0d | TPS-MJ-6d x 10hr Day Shift | N1LBA10 - 1U MAIN STEAM PIPE SYSTEM | PINKD | T-RGC | EB |
| 00597666-050 |  | Remove Lagging and Cladding | 0d | 2021-07-26 07:00 | 2021-07-26 07:00 | 00597666-040 | 21.4d | 0d | TPS-MJ-6d x 10hr Day Shift | N1LBA10 - 1U MAIN STEAM PIPE SYSTEM | UGL | T-LAG | EB |
| 00597666-060 |  | Install Pin into Pipe Support Hangers | 0d | 2021-07-26 07:00 | 2021-07-26 07:00 | 00597666-050 | 21.4d | 0d | TPS-MJ-6d x 10hr Day Shift | N1LBA10 - 1U MAIN STEAM PIPE SYSTEM | UGL | T-BOI | EB |
| 00597666-070 |  | Install Pipe Support System | 0d | 2021-07-26 07:00 | 2021-07-26 07:00 | 00597666-060 | 21.4d | 0d | TPS-MJ-6d x 10hr Day Shift | N1LBA10 - 1U MAIN STEAM PIPE SYSTEM | UGL | T-BOI | EB |
| 00597666-080 |  | Remove cracking from Weld | 0d | 2021-07-26 07:00 | 2021-07-26 07:00 | 00597666-070 | 21.4d | 0d | TPS-MJ-6d x 10hr Day Shift | N1LBA10 - 1U MAIN STEAM PIPE SYSTEM | UGL | T-BOI | EB |
| 00597666-090 |  | Install Heat Treatment Equipment | 0d | 2021-07-26 07:00 | 2021-07-26 07:00 | 00597666-080 | 21.4d | 0d | TPS-MJ-6d x 10hr Day Shift | N1LBA10 - 1U MAIN STEAM PIPE SYSTEM | FOX | T-FOX | EB |
| 00597666-100 |  | Repair Branch Weld | 0d | 2021-07-26 07:00 | 2021-07-26 07:00 | 00597666-090 | 21.4d | 0d | TPS-MJ-6d x 10hr Day Shift | N1LBA10 - 1U MAIN STEAM PIPE SYSTEM | UGL | T-BOI | EB |
| 00597666-110 |  | Perform Pre Post Weld Heat Treatment NDT | 0d | 2021-07-26 07:00 | 2021-07-26 07:00 | 00597666-100 | 21.4d | 0d | TPS-MJ-6d x 10hr Day Shift | N1LBA10 - 1U MAIN STEAM PIPE SYSTEM | ALS | T-NDT | EB |
| 00597666-120 |  | Perform Post Weld Heat Treatment | 0d | 2021-07-26 07:00 | 2021-07-26 07:00 | 00597666-110 | 21.4d | 0d | TPS-MJ-6d x 10hr Day Shift | N1LBA10 - 1U MAIN STEAM PIPE SYSTEM | FOX | T-FOX | EB |
| 00597666-130 |  | Perform Post Weld Heat Treatment NDT | 0d | 2021-07-26 07:00 | 2021-07-26 07:00 | 00597666-120 | 21.4d | 0d | TPS-MJ-6d x 10hr Day Shift | N1LBA10 - 1U MAIN STEAM PIPE SYSTEM | ALS | T-NDT | EB |
| 00597666-140 |  | Remove Pipe Support System | 0d | 2021-07-26 07:00 | 2021-07-26 07:00 | 00597666-130 | 21.4d | 0d | TPS-MJ-6d x 10hr Day Shift | N1LBA10 - 1U MAIN STEAM PIPE SYSTEM | UGL | T-BOI | EB |
| 00597666-150 |  | Remove Pin from Pipe Support Hangers | 0d | 2021-07-26 07:00 | 2021-07-26 07:00 | 00597666-140 | 21.4d | 0d | TPS-MJ-6d x 10hr Day Shift | N1LBA10 - 1U MAIN STEAM PIPE SYSTEM | UGL | T-BOI | EB |
| 00597666-160 |  | Install Lagging and Cladding | 0d | 2021-07-26 07:00 | 2021-07-26 07:00 | 00597666-150 | 21.4d | 0d | TPS-MJ-6d x 10hr Day Shift | N1LBA10 - 1U MAIN STEAM PIPE SYSTEM | UGL | T-LAG | EB |
| 00597666-170 |  | Remove Access Scaffolds | 0d | 2021-07-26 07:00 | 2021-07-26 07:00 | 00597666-160 | 21.4d | 0d | TPS-MJ-6d x 10hr Day Shift | N1LBA10 - 1U MAIN STEAM PIPE SYSTEM | PINKD | T-RGC | EB |
| 00597666-180 |  | Clean Penthouse Internals | 0d | 2021-07-26 07:00 | 2021-07-26 07:00 | 00597666-170 | 21.4d | 0d | TPS-MJ-6d x 10hr Day Shift | N1LBA10 - 1U MAIN STEAM PIPE SYSTEM | UGL | T-BOI | EB |
| 00597666-190 |  | Clean Up Works Area | 0d | 2021-07-26 07:00 | 2021-07-26 07:00 | 00597666-180 | 27d |  | TPS-MJ-6d x 10hr Day Shift | N1LBA10 - 1U MAIN STEAM PIPE SYSTEM | UGL | T-BOI | EB |
| 00597666-200 |  | 00597666-200 - Return SWA | 1.1d | 2021-07-26 07:00 | 2021-07-27 09:00 | 00597666-180 | 21.4d | 21.2d | TPS-MJ-6d x 10hr Day Shift |  |  |  |  |
|  | 00597667 | **00597668 - P21005 Header to Hi Energy Pipe Weld Rep-1** |  | 2021-05-28 07:00 | 2021-07-27 09:00 |  |  |  |  |  |  |  |  |
| 00597667-010 |  | Order Spares | 0d | 2021-05-28 07:00 | 2021-05-28 07:00 |  | 66.4d | 45d | TPS-MJ-6d x 10hr Day Shift | N1LBB10 - 1U HOT REHEAT PIPE SYSTEM | SCL | T-IBL | EB |
| 00597667-020 |  | SWA Application | 0d | 2021-07-26 07:00 | 2021-07-26 07:00 | 00597667-010, BFCRD-190 | 21.4d | 0d | TPS-MJ-6d x 10hr Day Shift | N1LBB10 - 1U HOT REHEAT PIPE SYSTEM | SCL | T-IBL | EB |
| 00597667-030 |  | Clean Penthouse Internals (Cleanaway) | 0d | 2021-07-26 07:00 | 2021-07-26 07:00 | 00597667-020 | 21.4d | 0d | TPS-MJ-6d x 10hr Day Shift | N1LBB10 - 1U HOT REHEAT PIPE SYSTEM | CLEANAW | T-VAC | EB |
| 00597667-040 |  | Install Access Scaffolds | 0d | 2021-07-26 07:00 | 2021-07-26 07:00 | 00597667-030 | 21.4d | 0d | TPS-MJ-6d x 10hr Day Shift | N1LBB10 - 1U HOT REHEAT PIPE SYSTEM | PINKD | T-RGC | EB |
| 00597667-050 |  | Remove Lagging and Cladding | 0d | 2021-07-26 07:00 | 2021-07-26 07:00 | 00597667-040 | 21.4d | 0d | TPS-MJ-6d x 10hr Day Shift | N1LBB10 - 1U HOT REHEAT PIPE SYSTEM | UGL | T-LAG | EB |
| 00597667-060 |  | Install Pin into Pipe Support Hangers | 0d | 2021-07-26 07:00 | 2021-07-26 07:00 | 00597667-050 | 21.4d | 0d | TPS-MJ-6d x 10hr Day Shift | N1LBB10 - 1U HOT REHEAT PIPE SYSTEM | UGL | T-BOI | EB |
| 00597667-070 |  | Install Pipe Support System | 0d | 2021-07-26 07:00 | 2021-07-26 07:00 | 00597667-060 | 21.4d | 0d | TPS-MJ-6d x 10hr Day Shift | N1LBB10 - 1U HOT REHEAT PIPE SYSTEM | UGL | T-BOI | EB |
| 00597667-080 |  | Remove cracking from Weld | 0d | 2021-07-26 07:00 | 2021-07-26 07:00 | 00597667-070 | 21.4d | 0d | TPS-MJ-6d x 10hr Day Shift | N1LBB10 - 1U HOT REHEAT PIPE SYSTEM | UGL | T-BOI | EB |
| 00597667-090 |  | Install Heat Treatment Equipment | 0d | 2021-07-26 07:00 | 2021-07-26 07:00 | 00597667-080 | 21.4d | 0d | TPS-MJ-6d x 10hr Day Shift | N1LBB10 - 1U HOT REHEAT PIPE SYSTEM | FOX | T-FOX | EB |
| 00597667-100 |  | Repair Branch Weld | 0d | 2021-07-26 07:00 | 2021-07-26 07:00 | 00597667-090 | 21.4d | 0d | TPS-MJ-6d x 10hr Day Shift | N1LBB10 - 1U HOT REHEAT PIPE SYSTEM | UGL | T-BOI | EB |
| 00597667-110 |  | Perform Pre Post Weld Heat Treatment NDT | 0d | 2021-07-26 07:00 | 2021-07-26 07:00 | 00597667-100 | 21.4d | 0d | TPS-MJ-6d x 10hr Day Shift | N1LBB10 - 1U HOT REHEAT PIPE SYSTEM | ALS | T-NDT | EB |
| 00597667-120 |  | Perform Post Weld Heat Treatment | 0d | 2021-07-26 07:00 | 2021-07-26 07:00 | 00597667-110 | 21.4d | 0d | TPS-MJ-6d x 10hr Day Shift | N1LBB10 - 1U HOT REHEAT PIPE SYSTEM | FOX | T-FOX | EB |
| 00597667-130 |  | Perform Post Weld Heat Treatment NDT | 0d | 2021-07-26 07:00 | 2021-07-26 07:00 | 00597667-120 | 21.4d | 0d | TPS-MJ-6d x 10hr Day Shift | N1LBB10 - 1U HOT REHEAT PIPE SYSTEM | ALS | T-NDT | EB |
| 00597667-140 |  | Remove Pipe Support System | 0d | 2021-07-26 07:00 | 2021-07-26 07:00 | 00597667-130 | 21.4d | 0d | TPS-MJ-6d x 10hr Day Shift | N1LBB10 - 1U HOT REHEAT PIPE SYSTEM | UGL | T-BOI | EB |
| 00597667-150 |  | Remove Pin from Pipe Support Hangers | 0d | 2021-07-26 07:00 | 2021-07-26 07:00 | 00597667-140 | 21.4d | 0d | TPS-MJ-6d x 10hr Day Shift | N1LBB10 - 1U HOT REHEAT PIPE SYSTEM | UGL | T-BOI | EB |
| 00597667-160 |  | Install Lagging and Cladding | 0d | 2021-07-26 07:00 | 2021-07-26 07:00 | 00597667-150 | 21.4d | 0d | TPS-MJ-6d x 10hr Day Shift | N1LBB10 - 1U HOT REHEAT PIPE SYSTEM | UGL | T-LAG | EB |
| 00597667-170 |  | Remove Access Scaffolds | 0d | 2021-07-26 07:00 | 2021-07-26 07:00 | 00597667-160 | 21.4d | 0d | TPS-MJ-6d x 10hr Day Shift | N1LBB10 - 1U HOT REHEAT PIPE SYSTEM | PINKD | T-RGC | EB |
| 00597667-180 |  | Clean Penthouse Internals | 0d | 2021-07-26 07:00 | 2021-07-26 07:00 | 00597667-170 | 21.4d | 0d | TPS-MJ-6d x 10hr Day Shift | N1LBB10 - 1U HOT REHEAT PIPE SYSTEM | UGL | T-BOI | EB |
| 00597667-190 |  | Clean Up Works Area | 0d | 2021-07-26 07:00 | 2021-07-26 07:00 | 00597667-180 | 27d |  | TPS-MJ-6d x 10hr Day Shift | N1LBB10 - 1U HOT REHEAT PIPE SYSTEM | UGL | T-BOI | EB |
| 00597667-200 |  | 00597667-200 - Return SWA | 1.1d | 2021-07-26 07:00 | 2021-07-27 09:00 | 00597667-180 | 21.4d | 21.2d | TPS-MJ-6d x 10hr Day Shift |  |  |  |  |

| ID | WBS | Activity | Duration | Start | Finish | Predecessors | Total float | Free float | Constraint | Calendar | KKS /Plant No. | Contractor - MJ | Work Groups | Co-ordinator | Key Activities |
| --- | --- | --- | --- | --- | --- | --- | --- | --- | --- | --- | --- | --- | --- | --- | --- |
|  | 00597668 | **00597668 - P21005 Drying Air Purge Pipework Install** |  | 2021-05-28 07:00 | 2021-07-27 09:00 |  |  |  |  |  |  |  |  |  |  |
| 00597668-010 |  | Order Spares | 0d | 2021-05-28 07:00 | 2021-05-28 07:00 |  | 66.4d | 45d |  | TPS-MJ-6d x 10hr Day Shift | N1LBC50 - 1U COLD REHEAT PIPE SYSTEM | SCL | T-IBL | EB |  |
| 00597668-020 |  | SWA Application | 0d | 2021-07-26 07:00 | 2021-07-26 07:00 | 00597668-010, BFCRD-190 | 21.4d | 0d |  | TPS-MJ-6d x 10hr Day Shift | N1LBC50 - 1U COLD REHEAT PIPE SYSTEM | SCL | T-IBL | EB |  |
| 00597668-030 |  | Clean Penthouse Internals (Cleanaway) | 0d | 2021-07-26 07:00 | 2021-07-26 07:00 | 00597668-020 | 21.4d | 0d |  | TPS-MJ-6d x 10hr Day Shift | N1LBC50 - 1U COLD REHEAT PIPE SYSTEM | CLEANAW | T-VAC | EB |  |
| 00597668-040 |  | Install Access Scaffolds | 0d | 2021-07-26 07:00 | 2021-07-26 07:00 | 00597668-030 | 21.4d | 0d |  | TPS-MJ-6d x 10hr Day Shift | N1LBC50 - 1U COLD REHEAT PIPE SYSTEM | PINKD | T-RGC | EB |  |
| 00597668-050 |  | Remove Lagging and Cladding | 0d | 2021-07-26 07:00 | 2021-07-26 07:00 | 00597668-040 | 21.4d | 0d |  | TPS-MJ-6d x 10hr Day Shift | N1LBC50 - 1U COLD REHEAT PIPE SYSTEM | UGL | T-LAG | EB |  |
| 00597668-060 |  | Install Pipe Support System | 0d | 2021-07-26 07:00 | 2021-07-26 07:00 | 00597668-050 | 21.4d | 0d |  | TPS-MJ-6d x 10hr Day Shift | N1LBC50 - 1U COLD REHEAT PIPE SYSTEM | UGL | T-BOI | EB |  |
| 00597668-070 |  | Bore Hole into Pipe for Branch Pipework | 0d | 2021-07-26 07:00 | 2021-07-26 07:00 | 00597668-060 | 21.4d | 0d |  | TPS-MJ-6d x 10hr Day Shift | N1LBC50 - 1U COLD REHEAT PIPE SYSTEM | UGL | T-BOI | EB |  |
| 00597668-080 |  | Install Air Drying Pipework | 0d | 2021-07-26 07:00 | 2021-07-26 07:00 | 00597668-070 | 21.4d | 0d |  | TPS-MJ-6d x 10hr Day Shift | N1LBC50 - 1U COLD REHEAT PIPE SYSTEM | UGL | T-BOI | EB |  |
| 00597668-090 |  | Perform Post Weld NDT | 0d | 2021-07-26 07:00 | 2021-07-26 07:00 | 00597668-080 | 21.4d | 0d |  | TPS-MJ-6d x 10hr Day Shift | N1LBC50 - 1U COLD REHEAT PIPE SYSTEM | ALS | T-NDT | EB |  |
| 00597668-100 |  | Remove Pipe Support System | 0d | 2021-07-26 07:00 | 2021-07-26 07:00 | 00597668-090 | 21.4d | 0d |  | TPS-MJ-6d x 10hr Day Shift | N1LBC50 - 1U COLD REHEAT PIPE SYSTEM | UGL | T-BOI | EB |  |
| 00597668-110 |  | Install Lagging and Cladding | 0d | 2021-07-26 07:00 | 2021-07-26 07:00 | 00597668-100 | 21.4d | 0d |  | TPS-MJ-6d x 10hr Day Shift | N1LBC50 - 1U COLD REHEAT PIPE SYSTEM | UGL | T-LAG | EB |  |
| 00597668-120 |  | Remove Access Scaffolds | 0d | 2021-07-26 07:00 | 2021-07-26 07:00 | 00597668-110 | 27d | 0d |  | TPS-MJ-6d x 10hr Day Shift | N1LBC50 - 1U COLD REHEAT PIPE SYSTEM | PINKD | T-RGC | EB |  |
| 00597668-130 |  | Clean Penthouse Internals | 0d | 2021-07-26 07:00 | 2021-07-26 07:00 | 00597668-120 | 27d | 0d |  | TPS-MJ-6d x 10hr Day Shift | N1LBC50 - 1U COLD REHEAT PIPE SYSTEM | UGL | T-BOI | EB |  |
| 00597668-140 |  | Clean Up Works Area | 0d | 2021-07-26 07:00 | 2021-07-26 07:00 | 00597668-130 | 27d |  |  | TPS-MJ-6d x 10hr Day Shift | N1LBC50 - 1U COLD REHEAT PIPE SYSTEM | UGL | T-BOI | EB |  |
| 00597668-150 |  | 00597668-150 - Return SWA | 1.1d | 2021-07-26 07:00 | 2021-07-27 09:00 | 00597668-110 | 21.4d | 21.2d |  | TPS-MJ-6d x 10hr Day Shift |  |  |  |  |  |
|  | 00599478 | **00599478 - P21005 Weld Repairs Overhead Costs** |  | 2021-05-28 07:00 | 2021-05-28 07:00 |  |  |  |  |  |  |  |  |  |  |
| 00599478-010 |  | Hire Vehicles | 0d | 2021-05-28 07:00 | 2021-05-28 07:00 |  | 72d |  |  | TPS-MJ-6d x 10hr Day Shift | N1LB - 1U STEAM SYSTEM | SCL | T-ADM | EB |  |
| 00599478-020 |  | Hire of Generators for Temp Supply | 0d | 2021-05-28 07:00 | 2021-05-28 07:00 |  | 72d |  |  | TPS-MJ-6d x 10hr Day Shift | N1LB - 1U STEAM SYSTEM | SCL | T-ADM | EB |  |
| 00599478-030 |  | Alimak Hire & Dismantle | 0d | 2021-05-28 07:00 | 2021-05-28 07:00 |  | 72d |  |  | TPS-MJ-6d x 10hr Day Shift | N1LB - 1U STEAM SYSTEM | SCL | T-ADM | EB |  |
|  | ru | **Boiler-Turbine Run Up** |  | 2021-08-23 15:00 | 2021-08-28 23:00 |  |  |  |  |  |  |  |  |  |  |
| BTRUCS-010 |  | Last SWA Returned | 0.25d | 2021-08-23 15:00 | 2021-08-23 17:00 | 00597668-150, 00597667-200, 00597666-200, 00597658-200, 00599484-620, 0059761X-230 | 1.69d | 0d |  | TPS-MJ-7d x 24hr |  | SCL | T-OPS |  | MILE |
| BTRUCS-020 |  | Restore ETM IC | 0.75d | 2021-08-23 17:00 | 2021-08-23 23:00 | BTRUCS-010 | 1.69d | 0d |  | TPS-MJ-7d x 24hr |  | SCL | T-OPS |  |  |
| BTRUCS-030 |  | Pre-Start Checksheets | 3d | 2021-08-23 23:00 | 2021-08-24 23:00 | BTRUCS-020 | 1.69d | 0d |  | TPS-MJ-7d x 24hr |  | SCL | T-OPS |  |  |
| BTRUCS-040 |  | Pre-coat fabric filters - lime coating | 0.88d | 2021-08-23 23:00 | 2021-08-24 06:00 | BTRUCS-020 | 9.56d | 7.88d |  | TPS-MJ-7d x 24hr |  | SCL | T-OPS |  |  |
| BTRUCS-050 |  | Aux steam range pre-start and pressurise | 1.25d | 2021-08-24 23:00 | 2021-08-25 09:00 | BTRUCS-030 | 10.75d |  |  | TPS-MJ-7d x 24hr |  | SCL | T-OPS |  |  |
| BTRUCS-060 |  | Fill and prime condensate system | 0.5d | 2021-08-24 23:00 | 2021-08-25 03:00 | BTRUCS-030 | 1.69d | 0d |  | TPS-MJ-7d x 24hr |  | SCL | T-OPS |  |  |
| BTRUCS-070 |  | CW system start | 0.25d | 2021-08-24 23:00 | 2021-08-25 01:00 | BTRUCS-030 | 11.75d |  |  | TPS-MJ-7d x 24hr |  | SCL | T-OPS |  |  |
| BTRUCS-080 |  | Condensate blow & vac raising | 0.5d | 2021-08-25 03:00 | 2021-08-25 07:00 | BTRUCS-060 | 1.69d | 0d |  | TPS-MJ-7d x 24hr |  | SCL | T-OPS |  |  |
| BTRUCS-090 |  | Condensate recirculation | 0.75d | 2021-08-25 07:00 | 2021-08-25 13:00 | BTRUCS-080 | 1.69d | 0d |  | TPS-MJ-7d x 24hr |  | SCL | T-OPS |  |  |
| BTRUCS-100 |  | LP cleanup blowdown | 0.38d | 2021-08-25 13:00 | 2021-08-25 16:00 | BTRUCS-090 | 1.69d | 0d |  | TPS-MJ-7d x 24hr |  | SCL | T-OPS |  |  |
| BTRUCS-110 |  | LP cleanup recirc | 0.75d | 2021-08-25 16:00 | 2021-08-25 22:00 | BTRUCS-100 | 1.69d | 0d |  | TPS-MJ-7d x 24hr |  | SCL | T-OPS |  |  |
| BTRUCS-120 |  | HP cleanup blowdown | 0.5d | 2021-08-25 22:00 | 2021-08-26 02:00 | BTRUCS-110 | 1.69d | 0d |  | TPS-MJ-7d x 24hr |  | SCL | T-OPS |  |  |
| BTRUCS-130 |  | HP cleanup recirc | 0.38d | 2021-08-26 02:00 | 2021-08-26 05:00 | BTRUCS-120 | 1.69d | 0d |  | TPS-MJ-7d x 24hr |  | SCL | T-OPS |  |  |
| BTRUCS-140 |  | Fill boiler | 0.25d | 2021-08-26 05:00 | 2021-08-26 07:00 | BTRUCS-130 | 1.69d | 0d |  | TPS-MJ-7d x 24hr |  | SCL | T-OPS |  |  |
| BTRUCS-150 |  | Boiler cold blowdown | 0.75d | 2021-08-26 07:00 | 2021-08-26 13:00 | BTRUCS-140 | 1.69d | 0d |  | TPS-MJ-7d x 24hr |  | SCL | T-OPS |  |  |
| BTRUCS-160 |  | Boiler cold cleanup recirc | 1d | 2021-08-26 13:00 | 2021-08-26 21:00 | BTRUCS-150 | 1.69d | 0d |  | TPS-MJ-7d x 24hr |  | SCL | T-OPS |  |  |
| BTRUCS-170 |  | Start air & gas system | 0.38d | 2021-08-26 21:00 | 2021-08-27 00:00 | BTRUCS-160, BTRUCS-040 | 1.69d | 0d |  | TPS-MJ-7d x 24hr |  | SCL | T-OPS |  | MILE |
| BTRUCS-180 |  | Boiler purge and leakoff test | 0.5d | 2021-08-27 00:00 | 2021-08-27 04:00 | BTRUCS-170 | 1.69d | 0d |  | TPS-MJ-7d x 24hr |  | SCL | T-OPS |  |  |
| BTRUCS-190 |  | Boiler firing - Nose temp to 195c | 0.12d | 2021-08-27 04:00 | 2021-08-27 05:00 | BTRUCS-180 | 1.69d | 0d |  | TPS-MJ-7d x 24hr |  | SCL | T-OPS |  |  |
| BTRUCS-200 |  | Boiler hot cleanup | 0.88d | 2021-08-27 05:00 | 2021-08-27 12:00 | BTRUCS-190 | 1.69d | 0d |  | TPS-MJ-7d x 24hr |  | SCL | T-OPS |  |  |
| BTRUCS-210 |  | Pressure raise to 11.7MPa | 0.25d | 2021-08-27 12:00 | 2021-08-27 14:00 | BTRUCS-200 | 1.69d | 0d |  | TPS-MJ-7d x 24hr |  | SCL | T-OPS |  |  |
| BTRUCS-220 |  | Ctrl Vlv warming | 0.25d | 2021-08-27 14:00 | 2021-08-27 16:00 | BTRUCS-210 | 1.69d | 0d |  | TPS-MJ-7d x 24hr |  | SCL | T-OPS |  |  |
| BTRUCS-230 |  | Steam to turbine - 400rpm rub chk | 0.25d | 2021-08-27 16:00 | 2021-08-27 18:00 | BTRUCS-220 | 1.69d | 0d |  | TPS-MJ-7d x 24hr |  | SCL | T-OPS |  |  |
| BTRUCS-240 |  | Heat soak 1 - 800rpm | 0.25d | 2021-08-27 18:00 | 2021-08-27 20:00 | BTRUCS-230 | 1.69d | 0d |  | TPS-MJ-7d x 24hr |  | SCL | T-OPS |  |  |
| BTRUCS-250 |  | Increase speed to 3000rpm | 0.25d | 2021-08-27 20:00 | 2021-08-27 22:00 | BTRUCS-240 | 1.69d | 0d |  | TPS-MJ-7d x 24hr |  | SCL | T-OPS |  | MILE |
| BTRUCS-260 |  | Heat soak 2 - 3000rpm | 0.25d | 2021-08-27 22:00 | 2021-08-28 00:00 | BTRUCS-250 | 1.69d | 0d |  | TPS-MJ-7d x 24hr |  | SCL | T-OPS |  |  |
| BTRUCS-270 |  | Turbine - Elec over speed test | 0.5d | 2021-08-28 00:00 | 2021-08-28 04:00 | BTRUCS-260 | 1.69d | 0d |  | TPS-MJ-7d x 24hr |  | SCL | T-OPS |  |  |
| BTRUCS-290 |  | GCB closed - synchronise to grid | 0.12d | 2021-08-28 04:00 | 2021-08-28 05:00 | BTRUCS-270 | 1.69d | 0d |  | TPS-MJ-7d x 24hr |  | SCL | T-OPS |  | MILE |
| BTRUCS-300 |  | Minimum load heat soak 13.5MW | 0.12d | 2021-08-28 05:00 | 2021-08-28 06:00 | BTRUCS-290 | 1.69d | 0d |  | TPS-MJ-7d x 24hr |  | SCL | T-OPS |  |  |
| BTRUCS-305 |  | Generator compliance test - spill checks | 0.06d | 2021-08-28 06:00 | 2021-08-28 06:30 | BTRUCS-300 | 1.69d | 0d |  | TPS-MJ-7d x 24hr |  | SCL | T-OPS |  |  |
| BTRUCS-310 |  | Unit load up 1 - to 225MW | 0.12d | 2021-08-28 06:30 | 2021-08-28 07:30 | BTRUCS-305 | 1.69d | 0d |  | TPS-MJ-7d x 24hr |  | SCL | T-OPS |  |  |
| BTRUCS-320 |  | EFP to SFP changeover | 0.12d | 2021-08-28 07:30 | 2021-08-28 08:30 | BTRUCS-310 | 1.69d | 0d |  | TPS-MJ-7d x 24hr |  | SCL | T-OPS |  |  |
| BTRUCS-330 |  | Unit load up 2 - to 443MW | 0.12d | 2021-08-28 08:30 | 2021-08-28 09:30 | BTRUCS-320 | 1.69d |  |  | TPS-MJ-7d x 24hr |  | SCL | T-OPS |  |  |
| BTRUCS-340 |  | Unconstrained Operation | 0d | 2021-08-28 23:00 | 2021-08-28 23:00 | BTRUCS-330 | 0d |  | finish on 2021-08-28 | TPS-MJ-7d x 24hr |  | SCL | T-OPS |  | MILE |

## Activity codes

| Code | Value | Meaning |
| --- | --- | --- |
| Co-ordinator | AK | Adrian Kedwell |
| Co-ordinator | EB | Elvis Bell |
| Co-ordinator | PV | Paul Vandeberg |
| Contractor - MJ | CHUBB | CHUBB Fire |
| Contractor - MJ | CLEANAW | CLEANAWAY |
| Contractor - MJ | FOX | FOXHEAT - Stress |
| Contractor - MJ | GE | General Electric |
| Contractor - MJ | JP RICH | JP RICHARD |
| Contractor - MJ | PINKD | Pink Diamond |
| Contractor - MJ | SCL | Stanwell Corp Ltd |
| Key Activities | MILE | MILESTONE |
| PKG - Co-ord 1 | MB | Mick Bleakley |
| PKG - Co-ord 1 | PV | Paul Vandeberg |
| UGL Sup. | CT | Chris Turner |
| UGL Sup. | GG | Graham Granshaw |
| Work Groups | 15112 | TPS Health & Safety |
| Work Groups | 5SFM | Site Services Fire Systems Mechanical |
| Work Groups | 5ZCF | UGL TPS Cleaning - Facilities |
| Work Groups | 5ZE | TPS Elect |
| Work Groups | T-ADM | Administration |
| Work Groups | T-BOI | Boiler |
| Work Groups | T-CLE | Cleaning |
| Work Groups | T-ENG | Engineering |
| Work Groups | T-FOX | Foxheat |
| Work Groups | T-HEL | HEAVY ELEC CONTRACT - DMH |
| Work Groups | T-IBL | Inspectors Boiler |
| Work Groups | T-ITX | Inspector Transformers |
| Work Groups | T-LAG | Lagging & Cladding |
| Work Groups | T-MAC | Machine Shop |
| Work Groups | T-NDT | NDT - SCL ALS QUEST |
| Work Groups | T-OPS | Operations |
| Work Groups | T-OTH | TARONG O-H - OTHER CONTRACTS |
| Work Groups | T-RGC | Scaffolding |
| Work Groups | T-TRX | Transformers |
| Work Groups | T-VAC | Vacuum Service |
